How a schedule from an exported table changed from version to version. A marks actual dates.

## Version 1 (saved 2026-08-20)

Note of the change: project demos

| ID | Task | Start | Finish |
| --- | --- | --- | --- |
| A-1001 | Layout & survey control — FAB2 L1 slab — bay A1 | 2026-07-27T07:00:00-07:00 | 2026-07-28T07:30:00-07:00 |
| A-1002 | Formwork & rebar placement — FAB2 L1 slab — bay A1 | 2026-07-28T07:30:00-07:00 | 2026-07-30T15:36:00-07:00 |
| A-1003 | Slab pour — FAB2 L1 slab — bay A1 | 2026-07-30T15:36:00-07:00 | 2026-07-31T14:24:00-07:00 |
| A-1004 | Slab finish & curing compound — FAB2 L1 slab — bay A1 | 2026-07-31T14:24:00-07:00 | 2026-08-03T06:06:00-07:00 |
| A-1005 | Structural steel erection — FAB2 L1 slab — bay A1 | 2026-08-07T14:06:00-07:00 | 2026-08-13T07:24:00-07:00 |
| A-1006 | Deck weld & shear stud installation — FAB2 L1 slab — bay A1 | 2026-08-13T07:24:00-07:00 | 2026-08-13T15:30:00-07:00 |
| A-1007 | Adhesive anchor installation — FAB2 L1 slab — bay A1 | 2026-08-13T15:30:00-07:00 | 2026-08-14T11:06:00-07:00 |
| A-1008 | Spray-applied fireproofing — FAB2 L1 slab — bay A1 | 2026-08-15T09:06:00-07:00 | 2026-08-17T09:00:00-07:00 |
| A-1009 | Structural steel high-build coating — FAB2 L1 slab — bay A1 | 2026-08-19T13:00:00-07:00 | 2026-08-20T09:12:00-07:00 |
| A-1010 | MEP hanger & rough-in — FAB2 L1 slab — bay A1 | 2026-08-20T09:12:00-07:00 | 2026-08-22T15:30:00-07:00 |
| A-1011 | Layout & survey control — FAB2 L1 slab — bay B1 | 2026-07-28T12:00:00-07:00 | 2026-07-29T13:18:00-07:00 |
| A-1012 | Formwork & rebar placement — FAB2 L1 slab — bay B1 | 2026-07-29T13:18:00-07:00 | 2026-08-03T06:18:00-07:00 |
| A-1013 | Slab pour — FAB2 L1 slab — bay B1 | 2026-08-03T06:18:00-07:00 | 2026-08-03T15:48:00-07:00 |
| A-1014 | Slab finish & curing compound — FAB2 L1 slab — bay B1 | 2026-08-03T15:48:00-07:00 | 2026-08-04T15:42:00-07:00 |
| A-1015 | Structural steel erection — FAB2 L1 slab — bay B1 | 2026-08-10T13:42:00-07:00 | 2026-08-14T15:48:00-07:00 |
| A-1016 | Deck weld & shear stud installation — FAB2 L1 slab — bay B1 | 2026-08-14T15:48:00-07:00 | 2026-08-15T13:54:00-07:00 |
| A-1017 | Adhesive anchor installation — FAB2 L1 slab — bay B1 | 2026-08-15T13:54:00-07:00 | 2026-08-17T09:48:00-07:00 |
| A-1018 | Spray-applied fireproofing — FAB2 L1 slab — bay B1 | 2026-08-18T07:48:00-07:00 | 2026-08-19T08:54:00-07:00 |
| A-1019 | Structural steel high-build coating — FAB2 L1 slab — bay B1 | 2026-08-21T12:54:00-07:00 | 2026-08-22T09:18:00-07:00 |
| A-1020 | MEP hanger & rough-in — FAB2 L1 slab — bay B1 | 2026-08-22T09:18:00-07:00 | 2026-08-26T10:54:00-07:00 |
| A-1021 | Layout & survey control — FAB2 L1 slab — bay C1 | 2026-07-29T11:00:00-07:00 | 2026-07-30T11:18:00-07:00 |
| A-1022 | Formwork & rebar placement — FAB2 L1 slab — bay C1 | 2026-07-30T11:18:00-07:00 | 2026-08-03T11:00:00-07:00 |
| A-1023 | Slab pour — FAB2 L1 slab — bay C1 | 2026-08-03T11:00:00-07:00 | 2026-08-04T09:00:00-07:00 |
| A-1024 | Slab finish & curing compound — FAB2 L1 slab — bay C1 | 2026-08-04T09:00:00-07:00 | 2026-08-05T07:42:00-07:00 |
| A-1025 | Structural steel erection — FAB2 L1 slab — bay C1 | 2026-08-10T15:42:00-07:00 | 2026-08-15T11:18:00-07:00 |
| A-1026 | Deck weld & shear stud installation — FAB2 L1 slab — bay C1 | 2026-08-15T11:18:00-07:00 | 2026-08-17T09:00:00-07:00 |
| A-1027 | Adhesive anchor installation — FAB2 L1 slab — bay C1 | 2026-08-17T09:00:00-07:00 | 2026-08-17T14:24:00-07:00 |
| A-1028 | Spray-applied fireproofing — FAB2 L1 slab — bay C1 | 2026-08-19T07:48:00-07:00 | 2026-08-20T07:48:00-07:00 |
| A-1029 | Structural steel high-build coating — FAB2 L1 slab — bay C1 | 2026-08-22T11:48:00-07:00 | 2026-08-24T07:30:00-07:00 |
| A-1030 | MEP hanger & rough-in — FAB2 L1 slab — bay C1 | 2026-08-24T07:30:00-07:00 | 2026-08-27T12:42:00-07:00 |
| A-1031 | Layout & survey control — FAB2 L1 slab — bay D1 | 2026-07-30T10:00:00-07:00 | 2026-07-31T11:18:00-07:00 |
| A-1032 | Formwork & rebar placement — FAB2 L1 slab — bay D1 | 2026-07-31T11:18:00-07:00 | 2026-08-04T13:12:00-07:00 |
| A-1033 | Slab pour — FAB2 L1 slab — bay D1 | 2026-08-04T13:12:00-07:00 | 2026-08-05T11:54:00-07:00 |
| A-1034 | Slab finish & curing compound — FAB2 L1 slab — bay D1 | 2026-08-05T11:54:00-07:00 | 2026-08-06T13:18:00-07:00 |
| A-1035 | Structural steel erection — FAB2 L1 slab — bay D1 | 2026-08-12T11:18:00-07:00 | 2026-08-17T09:42:00-07:00 |
| A-1036 | Deck weld & shear stud installation — FAB2 L1 slab — bay D1 | 2026-08-17T09:42:00-07:00 | 2026-08-18T07:42:00-07:00 |
| A-1037 | Adhesive anchor installation — FAB2 L1 slab — bay D1 | 2026-08-18T07:42:00-07:00 | 2026-08-18T12:18:00-07:00 |
| A-1038 | Spray-applied fireproofing — FAB2 L1 slab — bay D1 | 2026-08-20T07:48:00-07:00 | 2026-08-21T07:18:00-07:00 |
| A-1039 | Structural steel high-build coating — FAB2 L1 slab — bay D1 | 2026-08-24T11:18:00-07:00 | 2026-08-25T08:18:00-07:00 |
| A-1040 | MEP hanger & rough-in — FAB2 L1 slab — bay D1 | 2026-08-25T08:18:00-07:00 | 2026-08-28T06:48:00-07:00 |
| A-1041 | Layout & survey control — FAB2 L2 deck — bay A2 | 2026-08-10T06:24:00-07:00 | 2026-08-11T07:00:00-07:00 |
| A-1042 | Formwork & rebar placement — FAB2 L2 deck — bay A2 | 2026-08-11T07:00:00-07:00 | 2026-08-14T11:18:00-07:00 |
| A-1043 | Slab pour — FAB2 L2 deck — bay A2 | 2026-08-14T11:18:00-07:00 | 2026-08-15T08:24:00-07:00 |
| A-1044 | Slab finish & curing compound — FAB2 L2 deck — bay A2 | 2026-08-15T08:24:00-07:00 | 2026-08-17T08:00:00-07:00 |
| A-1045 | Structural steel erection — FAB2 L2 deck — bay A2 | 2026-08-22T06:00:00-07:00 | 2026-08-26T11:12:00-07:00 |
| A-1046 | Deck weld & shear stud installation — FAB2 L2 deck — bay A2 | 2026-08-26T11:12:00-07:00 | 2026-08-27T10:12:00-07:00 |
| A-1047 | Adhesive anchor installation — FAB2 L2 deck — bay A2 | 2026-08-27T10:12:00-07:00 | 2026-08-27T14:30:00-07:00 |
| A-1048 | Spray-applied fireproofing — FAB2 L2 deck — bay A2 | 2026-08-28T12:30:00-07:00 | 2026-08-29T12:24:00-07:00 |
| A-1049 | Structural steel high-build coating — FAB2 L2 deck — bay A2 | 2026-09-02T06:24:00-07:00 | 2026-09-02T13:06:00-07:00 |
| A-1050 | MEP hanger & rough-in — FAB2 L2 deck — bay A2 | 2026-09-02T13:06:00-07:00 | 2026-09-05T13:48:00-07:00 |
| A-1051 | Layout & survey control — FAB2 L2 deck — bay B2 | 2026-08-12T07:48:00-07:00 | 2026-08-13T09:24:00-07:00 |
| A-1052 | Formwork & rebar placement — FAB2 L2 deck — bay B2 | 2026-08-13T09:24:00-07:00 | 2026-08-17T11:06:00-07:00 |
| A-1053 | Slab pour — FAB2 L2 deck — bay B2 | 2026-08-17T11:06:00-07:00 | 2026-08-18T10:00:00-07:00 |
| A-1054 | Slab finish & curing compound — FAB2 L2 deck — bay B2 | 2026-08-18T10:00:00-07:00 | 2026-08-19T08:36:00-07:00 |
| A-1055 | Structural steel erection — FAB2 L2 deck — bay B2 | 2026-08-25T06:36:00-07:00 | 2026-08-29T06:48:00-07:00 |
| A-1056 | Deck weld & shear stud installation — FAB2 L2 deck — bay B2 | 2026-08-29T06:48:00-07:00 | 2026-08-29T15:36:00-07:00 |
| A-1057 | Adhesive anchor installation — FAB2 L2 deck — bay B2 | 2026-08-29T15:36:00-07:00 | 2026-08-31T10:48:00-07:00 |
| A-1058 | Spray-applied fireproofing — FAB2 L2 deck — bay B2 | 2026-09-01T08:48:00-07:00 | 2026-09-02T10:18:00-07:00 |
| A-1059 | Structural steel high-build coating — FAB2 L2 deck — bay B2 | 2026-09-04T14:18:00-07:00 | 2026-09-05T11:18:00-07:00 |
| A-1060 | MEP hanger & rough-in — FAB2 L2 deck — bay B2 | 2026-09-05T11:18:00-07:00 | 2026-09-10T15:48:00-07:00 |
| A-1061 | Layout & survey control — FAB2 L2 deck — bay C2 | 2026-08-12T11:00:00-07:00 | 2026-08-13T09:54:00-07:00 |
| A-1062 | Formwork & rebar placement — FAB2 L2 deck — bay C2 | 2026-08-13T09:54:00-07:00 | 2026-08-17T15:24:00-07:00 |
| A-1063 | Slab pour — FAB2 L2 deck — bay C2 | 2026-08-17T15:24:00-07:00 | 2026-08-18T13:36:00-07:00 |
| A-1064 | Slab finish & curing compound — FAB2 L2 deck — bay C2 | 2026-08-18T13:36:00-07:00 | 2026-08-19T12:12:00-07:00 |
| A-1065 | Structural steel erection — FAB2 L2 deck — bay C2 | 2026-08-25T10:12:00-07:00 | 2026-08-29T13:06:00-07:00 |
| A-1066 | Deck weld & shear stud installation — FAB2 L2 deck — bay C2 | 2026-08-29T13:06:00-07:00 | 2026-08-31T11:54:00-07:00 |
| A-1067 | Adhesive anchor installation — FAB2 L2 deck — bay C2 | 2026-08-31T11:54:00-07:00 | 2026-09-01T07:30:00-07:00 |
| A-1068 | Spray-applied fireproofing — FAB2 L2 deck — bay C2 | 2026-09-02T08:48:00-07:00 | 2026-09-03T09:30:00-07:00 |
| A-1069 | Structural steel high-build coating — FAB2 L2 deck — bay C2 | 2026-09-05T13:30:00-07:00 | 2026-09-08T09:36:00-07:00 |
| A-1070 | MEP hanger & rough-in — FAB2 L2 deck — bay C2 | 2026-09-08T09:36:00-07:00 | 2026-09-11T14:06:00-07:00 |

| ID | Task | Start | Finish |
| --- | --- | --- | --- |
| A-1071 | Layout & survey control — FAB2 L2 deck — bay D2 | 2026-08-13T13:54:00-07:00 | 2026-08-14T14:12:00-07:00 |
| A-1072 | Formwork & rebar placement — FAB2 L2 deck — bay D2 | 2026-08-14T14:12:00-07:00 | 2026-08-18T15:48:00-07:00 |
| A-1073 | Slab pour — FAB2 L2 deck — bay D2 | 2026-08-18T15:48:00-07:00 | 2026-08-19T14:30:00-07:00 |
| A-1074 | Slab finish & curing compound — FAB2 L2 deck — bay D2 | 2026-08-19T14:30:00-07:00 | 2026-08-20T13:06:00-07:00 |
| A-1075 | Structural steel erection — FAB2 L2 deck — bay D2 | 2026-08-26T11:06:00-07:00 | 2026-08-31T12:54:00-07:00 |
| A-1076 | Deck weld & shear stud installation — FAB2 L2 deck — bay D2 | 2026-08-31T12:54:00-07:00 | 2026-09-01T11:36:00-07:00 |
| A-1077 | Adhesive anchor installation — FAB2 L2 deck — bay D2 | 2026-09-01T11:36:00-07:00 | 2026-09-02T07:06:00-07:00 |
| A-1078 | Spray-applied fireproofing — FAB2 L2 deck — bay D2 | 2026-09-03T08:48:00-07:00 | 2026-09-04T08:30:00-07:00 |
| A-1079 | Structural steel high-build coating — FAB2 L2 deck — bay D2 | 2026-09-08T12:30:00-07:00 | 2026-09-09T07:42:00-07:00 |
| A-1080 | MEP hanger & rough-in — FAB2 L2 deck — bay D2 | 2026-09-09T07:42:00-07:00 | 2026-09-12T11:00:00-07:00 |
| A-1081 | Layout & survey control — FAB2 L3 deck — bay A3 | 2026-08-10T06:24:00-07:00 | 2026-08-11T07:30:00-07:00 |
| A-1082 | Formwork & rebar placement — FAB2 L3 deck — bay A3 | 2026-08-11T07:30:00-07:00 | 2026-08-14T12:06:00-07:00 |
| A-1083 | Slab pour — FAB2 L3 deck — bay A3 | 2026-08-14T12:06:00-07:00 | 2026-08-15T09:24:00-07:00 |
| A-1084 | Slab finish & curing compound — FAB2 L3 deck — bay A3 | 2026-08-15T09:24:00-07:00 | 2026-08-17T09:30:00-07:00 |
| A-1085 | Structural steel erection — FAB2 L3 deck — bay A3 | 2026-08-22T07:30:00-07:00 | 2026-08-26T14:30:00-07:00 |
| A-1086 | Deck weld & shear stud installation — FAB2 L3 deck — bay A3 | 2026-08-26T14:30:00-07:00 | 2026-08-27T12:24:00-07:00 |
| A-1087 | Adhesive anchor installation — FAB2 L3 deck — bay A3 | 2026-08-27T12:24:00-07:00 | 2026-08-28T06:48:00-07:00 |
| A-1088 | Spray-applied fireproofing — FAB2 L3 deck — bay A3 | 2026-09-04T08:48:00-07:00 | 2026-09-05T10:30:00-07:00 |
| A-1089 | Structural steel high-build coating — FAB2 L3 deck — bay A3 | 2026-09-09T14:30:00-07:00 | 2026-09-10T11:24:00-07:00 |
| A-1090 | MEP hanger & rough-in — FAB2 L3 deck — bay A3 | 2026-09-10T11:24:00-07:00 | 2026-09-14T13:12:00-07:00 |
| A-1091 | Layout & survey control — FAB2 L3 deck — bay B3 | 2026-08-12T07:48:00-07:00 | 2026-08-13T09:12:00-07:00 |
| A-1092 | Formwork & rebar placement — FAB2 L3 deck — bay B3 | 2026-08-13T09:12:00-07:00 | 2026-08-15T15:06:00-07:00 |
| A-1093 | Slab pour — FAB2 L3 deck — bay B3 | 2026-08-15T15:06:00-07:00 | 2026-08-17T12:24:00-07:00 |
| A-1094 | Slab finish & curing compound — FAB2 L3 deck — bay B3 | 2026-08-17T12:24:00-07:00 | 2026-08-18T11:12:00-07:00 |
| A-1095 | Structural steel erection — FAB2 L3 deck — bay B3 | 2026-08-24T09:12:00-07:00 | 2026-08-28T15:36:00-07:00 |
| A-1096 | Deck weld & shear stud installation — FAB2 L3 deck — bay B3 | 2026-08-28T15:36:00-07:00 | 2026-08-29T14:48:00-07:00 |
| A-1097 | Adhesive anchor installation — FAB2 L3 deck — bay B3 | 2026-08-29T14:48:00-07:00 | 2026-08-31T09:36:00-07:00 |
| A-1098 | Spray-applied fireproofing — FAB2 L3 deck — bay B3 | 2026-09-05T08:48:00-07:00 | 2026-09-08T10:42:00-07:00 |
| A-1099 | Structural steel high-build coating — FAB2 L3 deck — bay B3 | 2026-09-10T14:42:00-07:00 | 2026-09-11T11:12:00-07:00 |
| A-1100 | MEP hanger & rough-in — FAB2 L3 deck — bay B3 | 2026-09-11T11:12:00-07:00 | 2026-09-15T07:12:00-07:00 |
| A-1101 | Layout & survey control — FAB2 L3 deck — bay C3 | 2026-08-12T11:00:00-07:00 | 2026-08-13T12:48:00-07:00 |
| A-1102 | Formwork & rebar placement — FAB2 L3 deck — bay C3 | 2026-08-13T12:48:00-07:00 | 2026-08-17T15:18:00-07:00 |
| A-1103 | Slab pour — FAB2 L3 deck — bay C3 | 2026-08-17T15:18:00-07:00 | 2026-08-18T12:36:00-07:00 |
| A-1104 | Slab finish & curing compound — FAB2 L3 deck — bay C3 | 2026-08-18T12:36:00-07:00 | 2026-08-19T14:18:00-07:00 |
| A-1105 | Structural steel erection — FAB2 L3 deck — bay C3 | 2026-08-25T12:18:00-07:00 | 2026-08-29T09:00:00-07:00 |
| A-1106 | Deck weld & shear stud installation — FAB2 L3 deck — bay C3 | 2026-08-29T09:00:00-07:00 | 2026-08-31T07:36:00-07:00 |
| A-1107 | Adhesive anchor installation — FAB2 L3 deck — bay C3 | 2026-08-31T07:36:00-07:00 | 2026-08-31T12:54:00-07:00 |
| A-1108 | Spray-applied fireproofing — FAB2 L3 deck — bay C3 | 2026-09-08T08:48:00-07:00 | 2026-09-09T10:24:00-07:00 |
| A-1109 | Structural steel high-build coating — FAB2 L3 deck — bay C3 | 2026-09-11T14:24:00-07:00 | 2026-09-12T11:06:00-07:00 |
| A-1110 | MEP hanger & rough-in — FAB2 L3 deck — bay C3 | 2026-09-12T11:06:00-07:00 | 2026-09-16T09:00:00-07:00 |
| A-1111 | Layout & survey control — FAB2 L3 deck — bay D3 | 2026-08-13T13:54:00-07:00 | 2026-08-14T14:18:00-07:00 |
| A-1112 | Formwork & rebar placement — FAB2 L3 deck — bay D3 | 2026-08-14T14:18:00-07:00 | 2026-08-18T12:00:00-07:00 |
| A-1113 | Slab pour — FAB2 L3 deck — bay D3 | 2026-08-18T12:00:00-07:00 | 2026-08-19T10:54:00-07:00 |
| A-1114 | Slab finish & curing compound — FAB2 L3 deck — bay D3 | 2026-08-19T10:54:00-07:00 | 2026-08-20T11:54:00-07:00 |
| A-1115 | Structural steel erection — FAB2 L3 deck — bay D3 | 2026-08-26T09:54:00-07:00 | 2026-08-31T07:12:00-07:00 |
| A-1116 | Deck weld & shear stud installation — FAB2 L3 deck — bay D3 | 2026-08-31T07:12:00-07:00 | 2026-08-31T14:54:00-07:00 |
| A-1117 | Adhesive anchor installation — FAB2 L3 deck — bay D3 | 2026-08-31T14:54:00-07:00 | 2026-09-01T10:54:00-07:00 |
| A-1118 | Spray-applied fireproofing — FAB2 L3 deck — bay D3 | 2026-09-09T08:48:00-07:00 | 2026-09-10T09:54:00-07:00 |
| A-1119 | Structural steel high-build coating — FAB2 L3 deck — bay D3 | 2026-09-12T13:54:00-07:00 | 2026-09-14T10:36:00-07:00 |
| A-1120 | MEP hanger & rough-in — FAB2 L3 deck — bay D3 | 2026-09-14T10:36:00-07:00 | 2026-09-17T13:54:00-07:00 |
| A-1121 | Layout & survey control — FAB2 Perimeter facade — bay A4 | 2026-08-10T06:24:00-07:00 | 2026-08-10T15:00:00-07:00 |
| A-1122 | Formwork & rebar placement — FAB2 Perimeter facade — bay A4 | 2026-08-10T15:00:00-07:00 | 2026-08-14T09:12:00-07:00 |
| A-1123 | Slab pour — FAB2 Perimeter facade — bay A4 | 2026-08-14T09:12:00-07:00 | 2026-08-15T08:42:00-07:00 |
| A-1124 | Slab finish & curing compound — FAB2 Perimeter facade — bay A4 | 2026-08-15T08:42:00-07:00 | 2026-08-17T08:18:00-07:00 |
| A-1125 | Structural steel erection — FAB2 Perimeter facade — bay A4 | 2026-08-22T06:18:00-07:00 | 2026-08-27T13:24:00-07:00 |
| A-1126 | Deck weld & shear stud installation — FAB2 Perimeter facade — bay A4 | 2026-08-27T13:24:00-07:00 | 2026-08-28T11:12:00-07:00 |
| A-1127 | Adhesive anchor installation — FAB2 Perimeter facade — bay A4 | 2026-08-28T11:12:00-07:00 | 2026-08-29T07:00:00-07:00 |
| A-1128 | Spray-applied fireproofing — FAB2 Perimeter facade — bay A4 | 2026-09-10T08:48:00-07:00 | 2026-09-11T08:18:00-07:00 |
| A-1129 | Structural steel high-build coating — FAB2 Perimeter facade — bay A4 | 2026-09-14T12:18:00-07:00 | 2026-09-15T08:48:00-07:00 |
| A-1130 | MEP hanger & rough-in — FAB2 Perimeter facade — bay A4 | 2026-09-15T08:48:00-07:00 | 2026-09-18T07:18:00-07:00 |
| A-1131 | Layout & survey control — FAB2 Perimeter facade — bay B4 | 2026-08-12T07:48:00-07:00 | 2026-08-13T06:36:00-07:00 |
| A-1132 | Formwork & rebar placement — FAB2 Perimeter facade — bay B4 | 2026-08-13T06:36:00-07:00 | 2026-08-17T09:18:00-07:00 |
| A-1133 | Slab pour — FAB2 Perimeter facade — bay B4 | 2026-08-17T09:18:00-07:00 | 2026-08-18T08:30:00-07:00 |
| A-1134 | Slab finish & curing compound — FAB2 Perimeter facade — bay B4 | 2026-08-18T08:30:00-07:00 | 2026-08-19T09:00:00-07:00 |
| A-1135 | Structural steel erection — FAB2 Perimeter facade — bay B4 | 2026-08-25T07:00:00-07:00 | 2026-08-28T11:18:00-07:00 |
| A-1136 | Deck weld & shear stud installation — FAB2 Perimeter facade — bay B4 | 2026-08-28T11:18:00-07:00 | 2026-08-29T09:30:00-07:00 |
| A-1137 | Adhesive anchor installation — FAB2 Perimeter facade — bay B4 | 2026-08-29T09:30:00-07:00 | 2026-08-29T15:12:00-07:00 |
| A-1138 | Spray-applied fireproofing — FAB2 Perimeter facade — bay B4 | 2026-09-11T08:48:00-07:00 | 2026-09-12T08:24:00-07:00 |
| A-1139 | Structural steel high-build coating — FAB2 Perimeter facade — bay B4 | 2026-09-15T12:24:00-07:00 | 2026-09-16T08:18:00-07:00 |
| A-1140 | MEP hanger & rough-in — FAB2 Perimeter facade — bay B4 | 2026-09-16T08:18:00-07:00 | 2026-09-19T06:12:00-07:00 |

| ID | Task | Start | Finish |
| --- | --- | --- | --- |
| A-1141 | Excavation & subgrade prep — CUB grade — bay A1 | 2026-08-14T14:00:00-07:00 | 2026-08-18T06:54:00-07:00 |
| A-1142 | Equipment pad pour — CUB grade — bay A1 | 2026-08-18T06:54:00-07:00 | 2026-08-18T15:30:00-07:00 |
| A-1143 | Anchor bolt & adhesive anchor set — CUB grade — bay A1 | 2026-08-21T09:30:00-07:00 | 2026-08-21T14:36:00-07:00 |
| A-1144 | Equipment set & alignment — CUB grade — bay A1 | 2026-08-21T14:36:00-07:00 | 2026-08-25T15:48:00-07:00 |
| A-1145 | Pipe rack erection — CUB grade — bay A1 | 2026-08-25T15:48:00-07:00 | 2026-08-27T14:18:00-07:00 |
| A-1146 | Pipe rack & equipment coating — CUB grade — bay A1 | 2026-08-27T14:18:00-07:00 | 2026-08-28T09:48:00-07:00 |
| A-1147 | Conduit, grounding & terminations — CUB grade — bay A1 | 2026-08-29T10:18:00-07:00 | 2026-09-02T13:18:00-07:00 |
| A-1148 | Excavation & subgrade prep — CUB grade — bay B1 | 2026-08-15T06:00:00-07:00 | 2026-08-18T09:48:00-07:00 |
| A-1149 | Equipment pad pour — CUB grade — bay B1 | 2026-08-18T09:48:00-07:00 | 2026-08-19T07:18:00-07:00 |
| A-1150 | Anchor bolt & adhesive anchor set — CUB grade — bay B1 | 2026-08-21T11:18:00-07:00 | 2026-08-21T15:36:00-07:00 |
| A-1151 | Equipment set & alignment — CUB grade — bay B1 | 2026-08-21T15:36:00-07:00 | 2026-08-25T13:12:00-07:00 |
| A-1152 | Pipe rack erection — CUB grade — bay B1 | 2026-08-25T13:12:00-07:00 | 2026-08-28T06:12:00-07:00 |
| A-1153 | Pipe rack & equipment coating — CUB grade — bay B1 | 2026-08-28T06:12:00-07:00 | 2026-08-28T13:24:00-07:00 |
| A-1154 | Conduit, grounding & terminations — CUB grade — bay B1 | 2026-08-29T12:12:00-07:00 | 2026-09-02T09:30:00-07:00 |
| A-1155 | Excavation & subgrade prep — CUB grade — bay C1 | 2026-08-17T10:00:00-07:00 | 2026-08-19T08:12:00-07:00 |
| A-1156 | Equipment pad pour — CUB grade — bay C1 | 2026-08-19T08:12:00-07:00 | 2026-08-20T06:18:00-07:00 |
| A-1157 | Anchor bolt & adhesive anchor set — CUB grade — bay C1 | 2026-08-22T10:18:00-07:00 | 2026-08-22T15:18:00-07:00 |
| A-1158 | Equipment set & alignment — CUB grade — bay C1 | 2026-08-22T15:18:00-07:00 | 2026-08-26T13:12:00-07:00 |
| A-1159 | Pipe rack erection — CUB grade — bay C1 | 2026-08-26T13:12:00-07:00 | 2026-08-28T10:48:00-07:00 |
| A-1160 | Pipe rack & equipment coating — CUB grade — bay C1 | 2026-08-28T10:48:00-07:00 | 2026-08-29T06:24:00-07:00 |
| A-1161 | Conduit, grounding & terminations — CUB grade — bay C1 | 2026-08-31T06:48:00-07:00 | 2026-09-02T13:12:00-07:00 |
| A-1162 | Excavation & subgrade prep — CUB L2 — bay A2 | 2026-08-17T10:00:00-07:00 | 2026-08-19T08:12:00-07:00 |
| A-1163 | Equipment pad pour — CUB L2 — bay A2 | 2026-08-19T08:12:00-07:00 | 2026-08-19T15:42:00-07:00 |
| A-1164 | Anchor bolt & adhesive anchor set — CUB L2 — bay A2 | 2026-08-22T09:42:00-07:00 | 2026-08-22T14:06:00-07:00 |
| A-1165 | Equipment set & alignment — CUB L2 — bay A2 | 2026-08-22T14:06:00-07:00 | 2026-08-26T14:48:00-07:00 |
| A-1166 | Pipe rack erection — CUB L2 — bay A2 | 2026-08-26T14:48:00-07:00 | 2026-08-29T08:06:00-07:00 |
| A-1167 | Pipe rack & equipment coating — CUB L2 — bay A2 | 2026-08-29T08:06:00-07:00 | 2026-08-29T14:00:00-07:00 |
| A-1168 | Conduit, grounding & terminations — CUB L2 — bay A2 | 2026-08-31T14:06:00-07:00 | 2026-09-03T15:12:00-07:00 |
| A-1169 | Excavation & subgrade prep — CUB L2 — bay B2 | 2026-08-18T10:00:00-07:00 | 2026-08-20T12:54:00-07:00 |
| A-1170 | Equipment pad pour — CUB L2 — bay B2 | 2026-08-20T12:54:00-07:00 | 2026-08-21T10:36:00-07:00 |
| A-1171 | Anchor bolt & adhesive anchor set — CUB L2 — bay B2 | 2026-08-24T14:36:00-07:00 | 2026-08-25T09:12:00-07:00 |
| A-1172 | Equipment set & alignment — CUB L2 — bay B2 | 2026-08-25T09:12:00-07:00 | 2026-08-28T09:06:00-07:00 |
| A-1173 | Pipe rack erection — CUB L2 — bay B2 | 2026-08-28T09:06:00-07:00 | 2026-08-31T09:12:00-07:00 |
| A-1174 | Pipe rack & equipment coating — CUB L2 — bay B2 | 2026-08-31T09:12:00-07:00 | 2026-08-31T14:54:00-07:00 |
| A-1175 | Conduit, grounding & terminations — CUB L2 — bay B2 | 2026-09-01T15:12:00-07:00 | 2026-09-05T06:06:00-07:00 |
| A-1176 | Subgrade & vapour barrier — WHSE grade — bay A1 | 2026-08-21T06:00:00-07:00 | 2026-08-22T14:06:00-07:00 |
| A-1177 | Slab on grade pour — WHSE grade — bay A1 | 2026-08-22T14:06:00-07:00 | 2026-08-24T12:06:00-07:00 |
| A-1178 | Precast panel erection — WHSE grade — bay A1 | 2026-09-01T14:06:00-07:00 | 2026-09-05T08:54:00-07:00 |
| A-1179 | Connection weld — WHSE grade — bay A1 | 2026-09-05T08:54:00-07:00 | 2026-09-08T06:54:00-07:00 |
| A-1180 | Panel joint sealant — WHSE grade — bay A1 | 2026-09-08T06:54:00-07:00 | 2026-09-08T14:00:00-07:00 |
| A-1181 | Spray-applied fireproofing — WHSE grade — bay A1 | 2026-09-08T14:00:00-07:00 | 2026-09-09T15:06:00-07:00 |
| A-1182 | Interior floor marking — WHSE grade — bay A1 | 2026-09-12T09:06:00-07:00 | 2026-09-12T14:24:00-07:00 |
| A-1183 | Subgrade & vapour barrier — WHSE grade — bay B1 | 2026-08-24T06:00:00-07:00 | 2026-08-25T13:54:00-07:00 |
| A-1184 | Slab on grade pour — WHSE grade — bay B1 | 2026-08-25T13:54:00-07:00 | 2026-08-26T13:12:00-07:00 |
| A-1185 | Precast panel erection — WHSE grade — bay B1 | 2026-09-03T15:12:00-07:00 | 2026-09-09T09:06:00-07:00 |
| A-1186 | Connection weld — WHSE grade — bay B1 | 2026-09-09T09:06:00-07:00 | 2026-09-10T06:12:00-07:00 |
| A-1187 | Panel joint sealant — WHSE grade — bay B1 | 2026-09-10T06:12:00-07:00 | 2026-09-10T12:18:00-07:00 |
| A-1188 | Spray-applied fireproofing — WHSE grade — bay B1 | 2026-09-10T12:18:00-07:00 | 2026-09-11T12:18:00-07:00 |
| A-1189 | Interior floor marking — WHSE grade — bay B1 | 2026-09-15T06:18:00-07:00 | 2026-09-15T11:48:00-07:00 |
| A-1190 | Subgrade & vapour barrier — WHSE grade — bay A2 | 2026-08-24T14:00:00-07:00 | 2026-08-26T09:54:00-07:00 |
| A-1191 | Slab on grade pour — WHSE grade — bay A2 | 2026-08-26T09:54:00-07:00 | 2026-08-27T07:18:00-07:00 |
| A-1192 | Precast panel erection — WHSE grade — bay A2 | 2026-09-04T09:18:00-07:00 | 2026-09-09T09:30:00-07:00 |
| A-1193 | Connection weld — WHSE grade — bay A2 | 2026-09-09T09:30:00-07:00 | 2026-09-10T08:12:00-07:00 |
| A-1194 | Panel joint sealant — WHSE grade — bay A2 | 2026-09-10T08:12:00-07:00 | 2026-09-10T14:36:00-07:00 |
| A-1195 | Spray-applied fireproofing — WHSE grade — bay A2 | 2026-09-10T14:36:00-07:00 | 2026-09-11T15:06:00-07:00 |
| A-1196 | Interior floor marking — WHSE grade — bay A2 | 2026-09-15T09:06:00-07:00 | 2026-09-15T13:48:00-07:00 |
| A-1197 | Subgrade & vapour barrier — WHSE grade — bay B2 | 2026-08-25T09:00:00-07:00 | 2026-08-26T14:42:00-07:00 |
| A-1198 | Slab on grade pour — WHSE grade — bay B2 | 2026-08-26T14:42:00-07:00 | 2026-08-27T13:48:00-07:00 |
| A-1199 | Precast panel erection — WHSE grade — bay B2 | 2026-09-04T15:48:00-07:00 | 2026-09-09T11:48:00-07:00 |
| A-1200 | Connection weld — WHSE grade — bay B2 | 2026-09-09T11:48:00-07:00 | 2026-09-10T10:12:00-07:00 |
| A-1201 | Panel joint sealant — WHSE grade — bay B2 | 2026-09-10T10:12:00-07:00 | 2026-09-11T08:18:00-07:00 |
| A-1202 | Spray-applied fireproofing — WHSE grade — bay B2 | 2026-09-11T08:18:00-07:00 | 2026-09-12T08:54:00-07:00 |
| A-1203 | Interior floor marking — WHSE grade — bay B2 | 2026-09-15T12:54:00-07:00 | 2026-09-16T07:24:00-07:00 |
| A-1204 | Excavation & subgrade prep — CT grade — bay A1 | 2026-08-24T12:00:00-07:00 | 2026-08-26T14:42:00-07:00 |
| A-1205 | Equipment pad pour — CT grade — bay A1 | 2026-08-26T14:42:00-07:00 | 2026-08-27T13:54:00-07:00 |
| A-1206 | Anchor bolt & adhesive anchor set — CT grade — bay A1 | 2026-08-31T07:54:00-07:00 | 2026-08-31T13:00:00-07:00 |
| A-1207 | Equipment set & alignment — CT grade — bay A1 | 2026-08-31T13:00:00-07:00 | 2026-09-03T08:36:00-07:00 |
| A-1208 | Pipe rack erection — CT grade — bay A1 | 2026-09-03T08:36:00-07:00 | 2026-09-05T06:00:00-07:00 |
| A-1209 | Pipe rack & equipment coating — CT grade — bay A1 | 2026-09-05T06:00:00-07:00 | 2026-09-05T11:24:00-07:00 |
| A-1210 | Conduit, grounding & terminations — CT grade — bay A1 | 2026-09-08T12:00:00-07:00 | 2026-09-11T15:54:00-07:00 |

| ID | Task | Start | Finish |
| --- | --- | --- | --- |
| A-1211 | Excavation & subgrade prep — CT grade — bay B1 | 2026-08-24T07:00:00-07:00 | 2026-08-25T14:12:00-07:00 |
| A-1212 | Equipment pad pour — CT grade — bay B1 | 2026-08-25T14:12:00-07:00 | 2026-08-26T11:30:00-07:00 |
| A-1213 | Anchor bolt & adhesive anchor set — CT grade — bay B1 | 2026-08-28T15:30:00-07:00 | 2026-08-29T11:24:00-07:00 |
| A-1214 | Equipment set & alignment — CT grade — bay B1 | 2026-08-29T11:24:00-07:00 | 2026-09-03T06:24:00-07:00 |
| A-1215 | Pipe rack erection — CT grade — bay B1 | 2026-09-03T06:24:00-07:00 | 2026-09-05T10:00:00-07:00 |
| A-1216 | Pipe rack & equipment coating — CT grade — bay B1 | 2026-09-05T10:00:00-07:00 | 2026-09-05T15:42:00-07:00 |
| A-1217 | Conduit, grounding & terminations — CT grade — bay B1 | 2026-09-09T06:00:00-07:00 | 2026-09-12T07:12:00-07:00 |
| A-1218 | Excavation & subgrade prep — CT L2 — bay A2 | 2026-08-24T12:00:00-07:00 | 2026-08-26T13:12:00-07:00 |
| A-1219 | Equipment pad pour — CT L2 — bay A2 | 2026-08-26T13:12:00-07:00 | 2026-08-27T12:30:00-07:00 |
| A-1220 | Anchor bolt & adhesive anchor set — CT L2 — bay A2 | 2026-08-31T06:30:00-07:00 | 2026-08-31T11:00:00-07:00 |
| A-1221 | Equipment set & alignment — CT L2 — bay A2 | 2026-08-31T11:00:00-07:00 | 2026-09-04T06:18:00-07:00 |
| A-1222 | Pipe rack erection — CT L2 — bay A2 | 2026-09-04T06:18:00-07:00 | 2026-09-05T15:42:00-07:00 |
| A-1223 | Pipe rack & equipment coating — CT L2 — bay A2 | 2026-09-05T15:42:00-07:00 | 2026-09-08T12:06:00-07:00 |
| A-1224 | Conduit, grounding & terminations — CT L2 — bay A2 | 2026-09-09T11:42:00-07:00 | 2026-09-14T07:36:00-07:00 |
| A-1225 | Excavation & duct bank — SUB grade — bay A1 | 2026-08-27T09:00:00-07:00 | 2026-08-31T07:36:00-07:00 |
| A-1226 | Duct bank encasement pour — SUB grade — bay A1 | 2026-08-31T07:36:00-07:00 | 2026-09-01T06:54:00-07:00 |
| A-1227 | Transformer pad pour — SUB grade — bay A1 | 2026-09-03T10:54:00-07:00 | 2026-09-04T08:18:00-07:00 |
| A-1228 | Anchor & baseplate grout — SUB grade — bay A1 | 2026-09-08T12:18:00-07:00 | 2026-09-09T08:12:00-07:00 |
| A-1229 | Switchgear set — SUB grade — bay A1 | 2026-09-09T08:12:00-07:00 | 2026-09-10T15:36:00-07:00 |
| A-1230 | Steel structure coating touch-up — SUB grade — bay A1 | 2026-09-10T15:36:00-07:00 | 2026-09-11T11:48:00-07:00 |
| A-1231 | Cable pull & termination — SUB grade — bay A1 | 2026-09-11T11:48:00-07:00 | 2026-09-16T06:36:00-07:00 |
| A-1232 | Excavation & duct bank — SUB grade — bay B1 | 2026-08-29T07:00:00-07:00 | 2026-09-01T15:06:00-07:00 |
| A-1233 | Duct bank encasement pour — SUB grade — bay B1 | 2026-09-01T15:06:00-07:00 | 2026-09-02T14:00:00-07:00 |
| A-1234 | Transformer pad pour — SUB grade — bay B1 | 2026-09-05T08:00:00-07:00 | 2026-09-05T15:54:00-07:00 |
| A-1235 | Anchor & baseplate grout — SUB grade — bay B1 | 2026-09-10T09:54:00-07:00 | 2026-09-10T14:36:00-07:00 |
| A-1236 | Switchgear set — SUB grade — bay B1 | 2026-09-10T14:36:00-07:00 | 2026-09-12T12:30:00-07:00 |
| A-1237 | Steel structure coating touch-up — SUB grade — bay B1 | 2026-09-12T12:30:00-07:00 | 2026-09-14T08:48:00-07:00 |
| A-1238 | Cable pull & termination — SUB grade — bay B1 | 2026-09-14T08:48:00-07:00 | 2026-09-17T14:42:00-07:00 |
| A-1239 | Excavation & duct bank — SUB L2 — bay A2 | 2026-08-27T14:00:00-07:00 | 2026-08-31T10:54:00-07:00 |
| A-1240 | Duct bank encasement pour — SUB L2 — bay A2 | 2026-08-31T10:54:00-07:00 | 2026-09-01T09:24:00-07:00 |
| A-1241 | Transformer pad pour — SUB L2 — bay A2 | 2026-09-03T13:24:00-07:00 | 2026-09-04T12:18:00-07:00 |
| A-1242 | Anchor & baseplate grout — SUB L2 — bay A2 | 2026-09-09T06:18:00-07:00 | 2026-09-09T10:42:00-07:00 |
| A-1243 | Switchgear set — SUB L2 — bay A2 | 2026-09-09T10:42:00-07:00 | 2026-09-11T12:30:00-07:00 |
| A-1244 | Steel structure coating touch-up — SUB L2 — bay A2 | 2026-09-11T12:30:00-07:00 | 2026-09-12T08:30:00-07:00 |
| A-1245 | Cable pull & termination — SUB L2 — bay A2 | 2026-09-12T08:30:00-07:00 | 2026-09-17T13:24:00-07:00 |
| A-1246 | Footing excavation — BULK grade — bay A1 | 2026-08-26T07:00:00-07:00 | 2026-08-27T11:36:00-07:00 |
| A-1247 | Foundation pour — BULK grade — bay A1 | 2026-08-27T11:36:00-07:00 | 2026-08-28T10:12:00-07:00 |
| A-1248 | CMU wall construction — BULK grade — bay A1 | 2026-09-03T08:12:00-07:00 | 2026-09-04T07:36:00-07:00 |
| A-1249 | Bond beam & cell grouting — BULK grade — bay A1 | 2026-09-04T07:36:00-07:00 | 2026-09-05T06:12:00-07:00 |
| A-1250 | Steel lintel & joist weld — BULK grade — bay A1 | 2026-09-05T06:12:00-07:00 | 2026-09-05T13:24:00-07:00 |
| A-1251 | Roof deck & waterproofing — BULK grade — bay A1 | 2026-09-05T13:24:00-07:00 | 2026-09-10T11:42:00-07:00 |
| A-1252 | Perimeter joint sealant — BULK grade — bay A1 | 2026-09-12T15:42:00-07:00 | 2026-09-14T12:18:00-07:00 |
| A-1253 | Interior fit-out — BULK grade — bay A1 | 2026-09-14T12:18:00-07:00 | 2026-09-19T07:48:00-07:00 |
| A-1254 | Footing excavation — BULK grade — bay B1 | 2026-08-26T07:00:00-07:00 | 2026-08-27T13:54:00-07:00 |
| A-1255 | Foundation pour — BULK grade — bay B1 | 2026-08-27T13:54:00-07:00 | 2026-08-28T12:12:00-07:00 |
| A-1256 | CMU wall construction — BULK grade — bay B1 | 2026-09-03T10:12:00-07:00 | 2026-09-04T08:42:00-07:00 |
| A-1257 | Bond beam & cell grouting — BULK grade — bay B1 | 2026-09-04T08:42:00-07:00 | 2026-09-05T07:30:00-07:00 |
| A-1258 | Steel lintel & joist weld — BULK grade — bay B1 | 2026-09-05T07:30:00-07:00 | 2026-09-05T14:42:00-07:00 |
| A-1259 | Roof deck & waterproofing — BULK grade — bay B1 | 2026-09-05T14:42:00-07:00 | 2026-09-10T07:00:00-07:00 |
| A-1260 | Perimeter joint sealant — BULK grade — bay B1 | 2026-09-12T11:00:00-07:00 | 2026-09-14T08:36:00-07:00 |
| A-1261 | Interior fit-out — BULK grade — bay B1 | 2026-09-14T08:36:00-07:00 | 2026-09-18T09:18:00-07:00 |
| A-1262 | Footing excavation — BULK L2 — bay A2 | 2026-08-26T11:00:00-07:00 | 2026-08-27T14:18:00-07:00 |
| A-1263 | Foundation pour — BULK L2 — bay A2 | 2026-08-27T14:18:00-07:00 | 2026-08-28T12:30:00-07:00 |
| A-1264 | CMU wall construction — BULK L2 — bay A2 | 2026-09-03T10:30:00-07:00 | 2026-09-04T10:36:00-07:00 |
| A-1265 | Bond beam & cell grouting — BULK L2 — bay A2 | 2026-09-04T10:36:00-07:00 | 2026-09-05T09:54:00-07:00 |
| A-1266 | Steel lintel & joist weld — BULK L2 — bay A2 | 2026-09-05T09:54:00-07:00 | 2026-09-08T07:00:00-07:00 |
| A-1267 | Roof deck & waterproofing — BULK L2 — bay A2 | 2026-09-08T07:00:00-07:00 | 2026-09-10T14:00:00-07:00 |
| A-1268 | Perimeter joint sealant — BULK L2 — bay A2 | 2026-09-14T08:00:00-07:00 | 2026-09-14T15:30:00-07:00 |
| A-1269 | Interior fit-out — BULK L2 — bay A2 | 2026-09-14T15:30:00-07:00 | 2026-09-19T10:42:00-07:00 |
| A-1270 | Footing excavation — CHEM grade — bay A1 | 2026-08-26T10:00:00-07:00 | 2026-08-27T13:00:00-07:00 |
| A-1271 | Foundation pour — CHEM grade — bay A1 | 2026-08-27T13:00:00-07:00 | 2026-08-28T10:54:00-07:00 |
| A-1272 | CMU wall construction — CHEM grade — bay A1 | 2026-09-03T08:54:00-07:00 | 2026-09-04T07:48:00-07:00 |
| A-1273 | Bond beam & cell grouting — CHEM grade — bay A1 | 2026-09-04T07:48:00-07:00 | 2026-09-05T07:24:00-07:00 |
| A-1274 | Steel lintel & joist weld — CHEM grade — bay A1 | 2026-09-05T07:24:00-07:00 | 2026-09-05T15:06:00-07:00 |
| A-1275 | Roof deck & waterproofing — CHEM grade — bay A1 | 2026-09-05T15:06:00-07:00 | 2026-09-10T06:24:00-07:00 |
| A-1276 | Perimeter joint sealant — CHEM grade — bay A1 | 2026-09-12T10:24:00-07:00 | 2026-09-14T08:30:00-07:00 |
| A-1277 | Interior fit-out — CHEM grade — bay A1 | 2026-09-14T08:30:00-07:00 | 2026-09-17T15:18:00-07:00 |
| A-1278 | Footing excavation — CHEM grade — bay B1 | 2026-08-26T14:00:00-07:00 | 2026-08-28T07:00:00-07:00 |
| A-1279 | Foundation pour — CHEM grade — bay B1 | 2026-08-28T07:00:00-07:00 | 2026-08-29T06:06:00-07:00 |
| A-1280 | CMU wall construction — CHEM grade — bay B1 | 2026-09-03T14:06:00-07:00 | 2026-09-04T14:00:00-07:00 |

| ID | Task | Start | Finish |
| --- | --- | --- | --- |
| A-1281 | Bond beam & cell grouting — CHEM grade — bay B1 | 2026-09-04T14:00:00-07:00 | 2026-09-05T13:18:00-07:00 |
| A-1282 | Steel lintel & joist weld — CHEM grade — bay B1 | 2026-09-05T13:18:00-07:00 | 2026-09-08T12:24:00-07:00 |
| A-1283 | Roof deck & waterproofing — CHEM grade — bay B1 | 2026-09-08T12:24:00-07:00 | 2026-09-11T09:42:00-07:00 |
| A-1284 | Perimeter joint sealant — CHEM grade — bay B1 | 2026-09-14T13:42:00-07:00 | 2026-09-15T12:00:00-07:00 |
| A-1285 | Interior fit-out — CHEM grade — bay B1 | 2026-09-15T12:00:00-07:00 | 2026-09-19T06:54:00-07:00 |
| A-1286 | Footing excavation — CHEM L2 — bay A2 | 2026-08-29T12:00:00-07:00 | 2026-09-01T07:48:00-07:00 |
| A-1287 | Foundation pour — CHEM L2 — bay A2 | 2026-09-01T07:48:00-07:00 | 2026-09-01T15:48:00-07:00 |
| A-1288 | CMU wall construction — CHEM L2 — bay A2 | 2026-09-08T13:48:00-07:00 | 2026-09-09T12:06:00-07:00 |
| A-1289 | Bond beam & cell grouting — CHEM L2 — bay A2 | 2026-09-09T12:06:00-07:00 | 2026-09-10T11:42:00-07:00 |
| A-1290 | Steel lintel & joist weld — CHEM L2 — bay A2 | 2026-09-10T11:42:00-07:00 | 2026-09-11T10:48:00-07:00 |
| A-1291 | Roof deck & waterproofing — CHEM L2 — bay A2 | 2026-09-11T10:48:00-07:00 | 2026-09-14T12:24:00-07:00 |
| A-1292 | Perimeter joint sealant — CHEM L2 — bay A2 | 2026-09-17T06:24:00-07:00 | 2026-09-17T14:24:00-07:00 |
| A-1293 | Interior fit-out — CHEM L2 — bay A2 | 2026-09-17T14:24:00-07:00 | 2026-09-23T08:30:00-07:00 |
| A-1294 | Footing excavation — ADMIN grade — bay A1 | 2026-10-12T14:00:00-07:00 | 2026-10-14T11:30:00-07:00 |
| A-1295 | Foundation pour — ADMIN grade — bay A1 | 2026-10-14T11:30:00-07:00 | 2026-10-15T11:00:00-07:00 |
| A-1296 | CMU wall construction — ADMIN grade — bay A1 | 2026-10-23T11:00:00-07:00 | 2026-10-26T10:42:00-07:00 |
| A-1297 | Bond beam & cell grouting — ADMIN grade — bay A1 | 2026-10-26T10:42:00-07:00 | 2026-10-27T10:54:00-07:00 |
| A-1298 | Steel lintel & joist weld — ADMIN grade — bay A1 | 2026-10-27T10:54:00-07:00 | 2026-10-28T12:30:00-07:00 |
| A-1299 | Roof deck & waterproofing — ADMIN grade — bay A1 | 2026-10-28T12:30:00-07:00 | 2026-11-02T12:36:00-07:00 |
| A-1300 | Perimeter joint sealant — ADMIN grade — bay A1 | 2026-11-05T12:36:00-07:00 | 2026-11-06T12:12:00-07:00 |
| A-1301 | Interior fit-out — ADMIN grade — bay A1 | 2026-11-06T12:12:00-07:00 | 2026-11-13T14:42:00-07:00 |
| A-1302 | Footing excavation — ADMIN grade — bay B1 | 2026-10-13T14:00:00-07:00 | 2026-10-15T11:36:00-07:00 |
| A-1303 | Foundation pour — ADMIN grade — bay B1 | 2026-10-15T11:36:00-07:00 | 2026-10-16T11:00:00-07:00 |
| A-1304 | CMU wall construction — ADMIN grade — bay B1 | 2026-10-26T11:00:00-07:00 | 2026-10-27T12:06:00-07:00 |
| A-1305 | Bond beam & cell grouting — ADMIN grade — bay B1 | 2026-10-27T12:06:00-07:00 | 2026-10-28T11:48:00-07:00 |
| A-1306 | Steel lintel & joist weld — ADMIN grade — bay B1 | 2026-10-28T11:48:00-07:00 | 2026-10-29T12:06:00-07:00 |
| A-1307 | Roof deck & waterproofing — ADMIN grade — bay B1 | 2026-10-29T12:06:00-07:00 | 2026-11-04T07:18:00-07:00 |
| A-1308 | Perimeter joint sealant — ADMIN grade — bay B1 | 2026-11-09T07:18:00-07:00 | 2026-11-09T14:06:00-07:00 |
| A-1309 | Interior fit-out — ADMIN grade — bay B1 | 2026-11-09T14:06:00-07:00 | 2026-11-17T11:42:00-07:00 |
| A-1310 | Subgrade & vapour barrier — PARK grade — bay A1 | 2026-09-05T07:00:00-07:00 | 2026-09-09T06:24:00-07:00 |
| A-1311 | Slab on grade pour — PARK grade — bay A1 | 2026-09-09T06:24:00-07:00 | 2026-09-09T14:36:00-07:00 |
| A-1312 | Precast panel erection — PARK grade — bay A1 | 2026-09-18T06:36:00-07:00 | 2026-09-22T09:06:00-07:00 |
| A-1313 | Connection weld — PARK grade — bay A1 | 2026-09-22T09:06:00-07:00 | 2026-09-23T06:30:00-07:00 |
| A-1314 | Panel joint sealant — PARK grade — bay A1 | 2026-09-23T06:30:00-07:00 | 2026-09-23T12:30:00-07:00 |
| A-1315 | Spray-applied fireproofing — PARK grade — bay A1 | 2026-09-23T12:30:00-07:00 | 2026-09-24T13:12:00-07:00 |
| A-1316 | Interior floor marking — PARK grade — bay A1 | 2026-09-28T07:12:00-07:00 | 2026-09-28T12:18:00-07:00 |
| A-1317 | Subgrade & vapour barrier — PARK grade — bay B1 | 2026-09-05T15:00:00-07:00 | 2026-09-10T06:00:00-07:00 |
| A-1318 | Slab on grade pour — PARK grade — bay B1 | 2026-09-10T06:00:00-07:00 | 2026-09-10T12:54:00-07:00 |
| A-1319 | Precast panel erection — PARK grade — bay B1 | 2026-09-18T14:54:00-07:00 | 2026-09-23T10:12:00-07:00 |
| A-1320 | Connection weld — PARK grade — bay B1 | 2026-09-23T10:12:00-07:00 | 2026-09-24T08:18:00-07:00 |
| A-1321 | Panel joint sealant — PARK grade — bay B1 | 2026-09-24T08:18:00-07:00 | 2026-09-25T06:24:00-07:00 |
| A-1322 | Spray-applied fireproofing — PARK grade — bay B1 | 2026-09-25T06:24:00-07:00 | 2026-09-26T06:48:00-07:00 |
| A-1323 | Interior floor marking — PARK grade — bay B1 | 2026-09-29T10:48:00-07:00 | 2026-09-29T15:12:00-07:00 |
| A-1324 | Subgrade preparation — ROAD grade — bay A1 | 2027-01-15T13:00:00-07:00 | 2027-01-19T12:36:00-07:00 |
| A-1325 | Aggregate base course — ROAD grade — bay A1 | 2027-01-19T12:36:00-07:00 | 2027-01-21T14:42:00-07:00 |
| A-1326 | HMA base course — ROAD grade — bay A1 | 2027-01-21T14:42:00-07:00 | 2027-01-22T12:24:00-07:00 |
| A-1327 | HMA surface course — ROAD grade — bay A1 | 2027-01-26T06:24:00-07:00 | 2027-01-27T06:24:00-07:00 |
| A-1328 | Pavement marking & striping — ROAD grade — bay A1 | 2027-02-01T14:24:00-07:00 | 2027-02-02T09:24:00-07:00 |

## Version 2 (saved 2026-08-21)

Note of the change: Task 1: generator tuning — cold-weather + demo-window density + hero pair

Last finish 2027-02-02 → 2027-03-19 (+45d).

Changed:

| ID | Task | Start | Finish |
| --- | --- | --- | --- |
| A-1001 | Layout & survey control — FAB2 L1 slab — bay A1 | 2026-07-27T07:00:00-07:00 → 2026-07-15T07:00:00-07:00 (-12d) | 2026-07-28T07:30:00-07:00 → 2026-07-16T07:30:00-07:00 (-12d) |
| A-1002 | Formwork & rebar placement — FAB2 L1 slab — bay A1 | 2026-07-28T07:30:00-07:00 → 2026-07-16T07:30:00-07:00 (-12d) | 2026-07-30T15:36:00-07:00 → 2026-07-18T15:36:00-07:00 (-12d) |
| A-1003 | Slab pour — FAB2 L1 slab — bay A1 | 2026-07-30T15:36:00-07:00 → 2026-07-18T15:36:00-07:00 (-12d) | 2026-07-31T14:24:00-07:00 → 2026-07-20T14:24:00-07:00 (-11d) |
| A-1004 | Slab finish & curing compound — FAB2 L1 slab — bay A1 | 2026-07-31T14:24:00-07:00 → 2026-07-20T14:24:00-07:00 (-11d) | 2026-08-03T06:06:00-07:00 → 2026-07-22T06:06:00-07:00 (-12d) |
| A-1005 | Structural steel erection — FAB2 L1 slab — bay A1 | 2026-08-07T14:06:00-07:00 → 2026-07-27T14:06:00-07:00 (-11d) | 2026-08-13T07:24:00-07:00 → 2026-08-01T07:24:00-07:00 (-12d) |
| A-1006 | Deck weld & shear stud installation — FAB2 L1 slab — bay A1 | 2026-08-13T07:24:00-07:00 → 2026-08-01T07:24:00-07:00 (-12d) | 2026-08-13T15:30:00-07:00 → 2026-08-01T15:30:00-07:00 (-12d) |
| A-1007 | Adhesive anchor installation — FAB2 L1 slab — bay A1 | 2026-08-13T15:30:00-07:00 → 2026-08-01T15:30:00-07:00 (-12d) | 2026-08-14T11:06:00-07:00 → 2026-08-03T11:06:00-07:00 (-11d) |
| A-1008 | Spray-applied fireproofing — FAB2 L1 slab — bay A1 | 2026-08-15T09:06:00-07:00 → 2026-08-04T09:06:00-07:00 (-11d) | 2026-08-17T09:00:00-07:00 → 2026-08-05T09:00:00-07:00 (-12d) |
| A-1009 | Structural steel high-build coating — FAB2 L1 slab — bay A1 | 2026-08-19T13:00:00-07:00 → 2026-08-07T13:00:00-07:00 (-12d) | 2026-08-20T09:12:00-07:00 → 2026-08-08T09:12:00-07:00 (-12d) |
| A-1010 | MEP hanger & rough-in — FAB2 L1 slab — bay A1 | 2026-08-20T09:12:00-07:00 → 2026-08-08T09:12:00-07:00 (-12d) | 2026-08-22T15:30:00-07:00 → 2026-08-11T15:30:00-07:00 (-11d) |
| A-1011 | Layout & survey control — FAB2 L1 slab — bay B1 | 2026-07-28T12:00:00-07:00 → 2026-07-16T08:00:00-07:00 (-12d) | 2026-07-29T13:18:00-07:00 → 2026-07-17T09:18:00-07:00 (-12d) |
| A-1012 | Formwork & rebar placement — FAB2 L1 slab — bay B1 | 2026-07-29T13:18:00-07:00 → 2026-07-17T09:18:00-07:00 (-12d) | 2026-08-03T06:18:00-07:00 → 2026-07-21T12:18:00-07:00 (-13d) |
| A-1013 | Slab pour — FAB2 L1 slab — bay B1 | 2026-08-03T06:18:00-07:00 → 2026-07-21T12:18:00-07:00 (-13d) | 2026-08-03T15:48:00-07:00 → 2026-07-22T11:48:00-07:00 (-12d) |
| A-1014 | Slab finish & curing compound — FAB2 L1 slab — bay B1 | 2026-08-03T15:48:00-07:00 → 2026-07-22T11:48:00-07:00 (-12d) | 2026-08-04T15:42:00-07:00 → 2026-07-23T11:42:00-07:00 (-12d) |
| A-1015 | Structural steel erection — FAB2 L1 slab — bay B1 | 2026-08-10T13:42:00-07:00 → 2026-07-29T09:42:00-07:00 (-12d) | 2026-08-14T15:48:00-07:00 → 2026-08-03T11:48:00-07:00 (-11d) |
| A-1016 | Deck weld & shear stud installation — FAB2 L1 slab — bay B1 | 2026-08-14T15:48:00-07:00 → 2026-08-03T11:48:00-07:00 (-11d) | 2026-08-15T13:54:00-07:00 → 2026-08-04T09:54:00-07:00 (-11d) |
| A-1017 | Adhesive anchor installation — FAB2 L1 slab — bay B1 | 2026-08-15T13:54:00-07:00 → 2026-08-04T09:54:00-07:00 (-11d) | 2026-08-17T09:48:00-07:00 → 2026-08-04T15:48:00-07:00 (-13d) |
| A-1018 | Spray-applied fireproofing — FAB2 L1 slab — bay B1 | 2026-08-18T07:48:00-07:00 → 2026-08-05T13:48:00-07:00 (-13d) | 2026-08-19T08:54:00-07:00 → 2026-08-06T14:54:00-07:00 (-13d) |
| A-1019 | Structural steel high-build coating — FAB2 L1 slab — bay B1 | 2026-08-21T12:54:00-07:00 → 2026-08-10T08:54:00-07:00 (-11d) | 2026-08-22T09:18:00-07:00 → 2026-08-10T15:18:00-07:00 (-12d) |
| A-1020 | MEP hanger & rough-in — FAB2 L1 slab — bay B1 | 2026-08-22T09:18:00-07:00 → 2026-08-10T15:18:00-07:00 (-12d) | 2026-08-26T10:54:00-07:00 → 2026-08-14T06:54:00-07:00 (-12d) |
| A-1021 | Layout & survey control — FAB2 L1 slab — bay C1 | 2026-07-29T11:00:00-07:00 → 2026-07-16T13:00:00-07:00 (-13d) | 2026-07-30T11:18:00-07:00 → 2026-07-17T13:18:00-07:00 (-13d) |
| A-1022 | Formwork & rebar placement — FAB2 L1 slab — bay C1 | 2026-07-30T11:18:00-07:00 → 2026-07-17T13:18:00-07:00 (-13d) | 2026-08-03T11:00:00-07:00 → 2026-07-21T13:00:00-07:00 (-13d) |
| A-1023 | Slab pour — FAB2 L1 slab — bay C1 | 2026-08-03T11:00:00-07:00 → 2026-07-21T13:00:00-07:00 (-13d) | 2026-08-04T09:00:00-07:00 → 2026-07-22T11:00:00-07:00 (-13d) |
| A-1024 | Slab finish & curing compound — FAB2 L1 slab — bay C1 | 2026-08-04T09:00:00-07:00 → 2026-07-22T11:00:00-07:00 (-13d) | 2026-08-05T07:42:00-07:00 → 2026-07-23T09:42:00-07:00 (-13d) |
| A-1025 | Structural steel erection — FAB2 L1 slab — bay C1 | 2026-08-10T15:42:00-07:00 → 2026-07-29T07:42:00-07:00 (-12d) | 2026-08-15T11:18:00-07:00 → 2026-08-03T13:18:00-07:00 (-12d) |
| A-1026 | Deck weld & shear stud installation — FAB2 L1 slab — bay C1 | 2026-08-15T11:18:00-07:00 → 2026-08-03T13:18:00-07:00 (-12d) | 2026-08-17T09:00:00-07:00 → 2026-08-04T11:00:00-07:00 (-13d) |
| A-1027 | Adhesive anchor installation — FAB2 L1 slab — bay C1 | 2026-08-17T09:00:00-07:00 → 2026-08-04T11:00:00-07:00 (-13d) | 2026-08-17T14:24:00-07:00 → 2026-08-05T06:24:00-07:00 (-12d) |
| A-1028 | Spray-applied fireproofing — FAB2 L1 slab — bay C1 | 2026-08-19T07:48:00-07:00 → 2026-08-06T13:48:00-07:00 (-13d) | 2026-08-20T07:48:00-07:00 → 2026-08-07T13:48:00-07:00 (-13d) |
| A-1029 | Structural steel high-build coating — FAB2 L1 slab — bay C1 | 2026-08-22T11:48:00-07:00 → 2026-08-11T07:48:00-07:00 (-11d) | 2026-08-24T07:30:00-07:00 → 2026-08-11T13:30:00-07:00 (-13d) |
| A-1030 | MEP hanger & rough-in — FAB2 L1 slab — bay C1 | 2026-08-24T07:30:00-07:00 → 2026-08-11T13:30:00-07:00 (-13d) | 2026-08-27T12:42:00-07:00 → 2026-08-15T08:42:00-07:00 (-12d) |
| A-1031 | Layout & survey control — FAB2 L1 slab — bay D1 | 2026-07-30T10:00:00-07:00 → 2026-07-17T08:00:00-07:00 (-13d) | 2026-07-31T11:18:00-07:00 → 2026-07-18T09:18:00-07:00 (-13d) |
| A-1032 | Formwork & rebar placement — FAB2 L1 slab — bay D1 | 2026-07-31T11:18:00-07:00 → 2026-07-18T09:18:00-07:00 (-13d) | 2026-08-04T13:12:00-07:00 → 2026-07-22T11:12:00-07:00 (-13d) |
| A-1033 | Slab pour — FAB2 L1 slab — bay D1 | 2026-08-04T13:12:00-07:00 → 2026-07-22T11:12:00-07:00 (-13d) | 2026-08-05T11:54:00-07:00 → 2026-07-23T09:54:00-07:00 (-13d) |
| A-1034 | Slab finish & curing compound — FAB2 L1 slab — bay D1 | 2026-08-05T11:54:00-07:00 → 2026-07-23T09:54:00-07:00 (-13d) | 2026-08-06T13:18:00-07:00 → 2026-07-24T11:18:00-07:00 (-13d) |
| A-1035 | Structural steel erection — FAB2 L1 slab — bay D1 | 2026-08-12T11:18:00-07:00 → 2026-07-30T09:18:00-07:00 (-13d) | 2026-08-17T09:42:00-07:00 → 2026-08-04T07:42:00-07:00 (-13d) |
| A-1036 | Deck weld & shear stud installation — FAB2 L1 slab — bay D1 | 2026-08-17T09:42:00-07:00 → 2026-08-04T07:42:00-07:00 (-13d) | 2026-08-18T07:42:00-07:00 → 2026-08-04T15:42:00-07:00 (-14d) |
| A-1037 | Adhesive anchor installation — FAB2 L1 slab — bay D1 | 2026-08-18T07:42:00-07:00 → 2026-08-04T15:42:00-07:00 (-14d) | 2026-08-18T12:18:00-07:00 → 2026-08-05T10:18:00-07:00 (-13d) |
| A-1038 | Spray-applied fireproofing — FAB2 L1 slab — bay D1 | 2026-08-20T07:48:00-07:00 → 2026-08-07T13:48:00-07:00 (-13d) | 2026-08-21T07:18:00-07:00 → 2026-08-08T13:18:00-07:00 (-13d) |
| A-1039 | Structural steel high-build coating — FAB2 L1 slab — bay D1 | 2026-08-24T11:18:00-07:00 → 2026-08-12T07:18:00-07:00 (-12d) | 2026-08-25T08:18:00-07:00 → 2026-08-12T14:18:00-07:00 (-13d) |
| A-1040 | MEP hanger & rough-in — FAB2 L1 slab — bay D1 | 2026-08-25T08:18:00-07:00 → 2026-08-12T14:18:00-07:00 (-13d) | 2026-08-28T06:48:00-07:00 → 2026-08-15T12:48:00-07:00 (-13d) |
| A-1041 | Layout & survey control — FAB2 L2 deck — bay A2 | 2026-08-10T06:24:00-07:00 → 2026-07-29T06:24:00-07:00 (-12d) | 2026-08-11T07:00:00-07:00 → 2026-07-30T07:00:00-07:00 (-12d) |
| A-1042 | Formwork & rebar placement — FAB2 L2 deck — bay A2 | 2026-08-11T07:00:00-07:00 → 2026-07-30T07:00:00-07:00 (-12d) | 2026-08-14T11:18:00-07:00 → 2026-08-03T11:18:00-07:00 (-11d) |
| A-1043 | Slab pour — FAB2 L2 deck — bay A2 | 2026-08-14T11:18:00-07:00 → 2026-08-03T11:18:00-07:00 (-11d) | 2026-08-15T08:24:00-07:00 → 2026-08-04T08:24:00-07:00 (-11d) |
| A-1044 | Slab finish & curing compound — FAB2 L2 deck — bay A2 | 2026-08-15T08:24:00-07:00 → 2026-08-04T08:24:00-07:00 (-11d) | 2026-08-17T08:00:00-07:00 → 2026-08-05T08:00:00-07:00 (-12d) |
| A-1045 | Structural steel erection — FAB2 L2 deck — bay A2 | 2026-08-22T06:00:00-07:00 → 2026-08-11T06:00:00-07:00 (-11d) | 2026-08-26T11:12:00-07:00 → 2026-08-14T11:12:00-07:00 (-12d) |
| A-1046 | Deck weld & shear stud installation — FAB2 L2 deck — bay A2 | 2026-08-26T11:12:00-07:00 → 2026-08-14T11:12:00-07:00 (-12d) | 2026-08-27T10:12:00-07:00 → 2026-08-15T10:12:00-07:00 (-12d) |
| A-1047 | Adhesive anchor installation — FAB2 L2 deck — bay A2 | 2026-08-27T10:12:00-07:00 → 2026-08-15T10:12:00-07:00 (-12d) | 2026-08-27T14:30:00-07:00 → 2026-08-15T14:30:00-07:00 (-12d) |
| A-1048 | Spray-applied fireproofing — FAB2 L2 deck — bay A2 | 2026-08-28T12:30:00-07:00 → 2026-08-17T12:30:00-07:00 (-11d) | 2026-08-29T12:24:00-07:00 → 2026-08-18T12:24:00-07:00 (-11d) |
| A-1049 | Structural steel high-build coating — FAB2 L2 deck — bay A2 | 2026-09-02T06:24:00-07:00 → 2026-08-21T06:24:00-07:00 (-12d) | 2026-09-02T13:06:00-07:00 → 2026-08-21T13:06:00-07:00 (-12d) |
| A-1050 | MEP hanger & rough-in — FAB2 L2 deck — bay A2 | 2026-09-02T13:06:00-07:00 → 2026-08-21T13:06:00-07:00 (-12d) | 2026-09-05T13:48:00-07:00 → 2026-08-25T13:48:00-07:00 (-11d) |
| A-1051 | Layout & survey control — FAB2 L2 deck — bay B2 | 2026-08-12T07:48:00-07:00 → 2026-07-30T13:48:00-07:00 (-13d) | 2026-08-13T09:24:00-07:00 → 2026-07-31T15:24:00-07:00 (-13d) |
| A-1052 | Formwork & rebar placement — FAB2 L2 deck — bay B2 | 2026-08-13T09:24:00-07:00 → 2026-07-31T15:24:00-07:00 (-13d) | 2026-08-17T11:06:00-07:00 → 2026-08-05T07:06:00-07:00 (-12d) |
| A-1053 | Slab pour — FAB2 L2 deck — bay B2 | 2026-08-17T11:06:00-07:00 → 2026-08-05T07:06:00-07:00 (-12d) | 2026-08-18T10:00:00-07:00 → 2026-08-06T06:00:00-07:00 (-12d) |
| A-1054 | Slab finish & curing compound — FAB2 L2 deck — bay B2 | 2026-08-18T10:00:00-07:00 → 2026-08-06T06:00:00-07:00 (-12d) | 2026-08-19T08:36:00-07:00 → 2026-08-06T14:36:00-07:00 (-13d) |
| A-1055 | Structural steel erection — FAB2 L2 deck — bay B2 | 2026-08-25T06:36:00-07:00 → 2026-08-12T12:36:00-07:00 (-13d) | 2026-08-29T06:48:00-07:00 → 2026-08-17T12:48:00-07:00 (-12d) |
| A-1056 | Deck weld & shear stud installation — FAB2 L2 deck — bay B2 | 2026-08-29T06:48:00-07:00 → 2026-08-17T12:48:00-07:00 (-12d) | 2026-08-29T15:36:00-07:00 → 2026-08-18T11:36:00-07:00 (-11d) |
| A-1057 | Adhesive anchor installation — FAB2 L2 deck — bay B2 | 2026-08-29T15:36:00-07:00 → 2026-08-18T11:36:00-07:00 (-11d) | 2026-08-31T10:48:00-07:00 → 2026-08-19T06:48:00-07:00 (-12d) |
| A-1058 | Spray-applied fireproofing — FAB2 L2 deck — bay B2 | 2026-09-01T08:48:00-07:00 → 2026-08-19T14:48:00-07:00 (-13d) | 2026-09-02T10:18:00-07:00 → 2026-08-21T06:18:00-07:00 (-12d) |
| A-1059 | Structural steel high-build coating — FAB2 L2 deck — bay B2 | 2026-09-04T14:18:00-07:00 → 2026-08-24T10:18:00-07:00 (-11d) | 2026-09-05T11:18:00-07:00 → 2026-08-25T07:18:00-07:00 (-11d) |
| A-1060 | MEP hanger & rough-in — FAB2 L2 deck — bay B2 | 2026-09-05T11:18:00-07:00 → 2026-08-25T07:18:00-07:00 (-11d) | 2026-09-10T15:48:00-07:00 → 2026-08-28T11:48:00-07:00 (-13d) |
| A-1061 | Layout & survey control — FAB2 L2 deck — bay C2 | 2026-08-12T11:00:00-07:00 → 2026-07-30T13:00:00-07:00 (-13d) | 2026-08-13T09:54:00-07:00 → 2026-07-31T11:54:00-07:00 (-13d) |
| A-1062 | Formwork & rebar placement — FAB2 L2 deck — bay C2 | 2026-08-13T09:54:00-07:00 → 2026-07-31T11:54:00-07:00 (-13d) | 2026-08-17T15:24:00-07:00 → 2026-08-05T07:24:00-07:00 (-12d) |
| A-1063 | Slab pour — FAB2 L2 deck — bay C2 | 2026-08-17T15:24:00-07:00 → 2026-08-05T07:24:00-07:00 (-12d) | 2026-08-18T13:36:00-07:00 → 2026-08-05T15:36:00-07:00 (-13d) |
| A-1064 | Slab finish & curing compound — FAB2 L2 deck — bay C2 | 2026-08-18T13:36:00-07:00 → 2026-08-05T15:36:00-07:00 (-13d) | 2026-08-19T12:12:00-07:00 → 2026-08-06T14:12:00-07:00 (-13d) |
| A-1065 | Structural steel erection — FAB2 L2 deck — bay C2 | 2026-08-25T10:12:00-07:00 → 2026-08-12T12:12:00-07:00 (-13d) | 2026-08-29T13:06:00-07:00 → 2026-08-17T15:06:00-07:00 (-12d) |
| A-1066 | Deck weld & shear stud installation — FAB2 L2 deck — bay C2 | 2026-08-29T13:06:00-07:00 → 2026-08-17T15:06:00-07:00 (-12d) | 2026-08-31T11:54:00-07:00 → 2026-08-18T13:54:00-07:00 (-13d) |
| A-1067 | Adhesive anchor installation — FAB2 L2 deck — bay C2 | 2026-08-31T11:54:00-07:00 → 2026-08-18T13:54:00-07:00 (-13d) | 2026-09-01T07:30:00-07:00 → 2026-08-19T09:30:00-07:00 (-13d) |
| A-1068 | Spray-applied fireproofing — FAB2 L2 deck — bay C2 | 2026-09-02T08:48:00-07:00 → 2026-08-20T14:48:00-07:00 (-13d) | 2026-09-03T09:30:00-07:00 → 2026-08-21T15:30:00-07:00 (-13d) |
| A-1069 | Structural steel high-build coating — FAB2 L2 deck — bay C2 | 2026-09-05T13:30:00-07:00 → 2026-08-25T09:30:00-07:00 (-11d) | 2026-09-08T09:36:00-07:00 → 2026-08-25T15:36:00-07:00 (-14d) |
| A-1070 | MEP hanger & rough-in — FAB2 L2 deck — bay C2 | 2026-09-08T09:36:00-07:00 → 2026-08-25T15:36:00-07:00 (-14d) | 2026-09-11T14:06:00-07:00 → 2026-08-29T10:06:00-07:00 (-13d) |

| ID | Task | Start | Finish |
| --- | --- | --- | --- |
| A-1071 | Layout & survey control — FAB2 L2 deck — bay D2 | 2026-08-13T13:54:00-07:00 → 2026-07-31T11:54:00-07:00 (-13d) | 2026-08-14T14:12:00-07:00 → 2026-08-01T12:12:00-07:00 (-13d) |
| A-1072 | Formwork & rebar placement — FAB2 L2 deck — bay D2 | 2026-08-14T14:12:00-07:00 → 2026-08-01T12:12:00-07:00 (-13d) | 2026-08-18T15:48:00-07:00 → 2026-08-05T13:48:00-07:00 (-13d) |
| A-1073 | Slab pour — FAB2 L2 deck — bay D2 | 2026-08-18T15:48:00-07:00 → 2026-08-05T13:48:00-07:00 (-13d) | 2026-08-19T14:30:00-07:00 → 2026-08-06T12:30:00-07:00 (-13d) |
| A-1074 | Slab finish & curing compound — FAB2 L2 deck — bay D2 | 2026-08-19T14:30:00-07:00 → 2026-08-06T12:30:00-07:00 (-13d) | 2026-08-20T13:06:00-07:00 → 2026-08-07T11:06:00-07:00 (-13d) |
| A-1075 | Structural steel erection — FAB2 L2 deck — bay D2 | 2026-08-26T11:06:00-07:00 → 2026-08-13T09:06:00-07:00 (-13d) | 2026-08-31T12:54:00-07:00 → 2026-08-18T10:54:00-07:00 (-13d) |
| A-1076 | Deck weld & shear stud installation — FAB2 L2 deck — bay D2 | 2026-08-31T12:54:00-07:00 → 2026-08-18T10:54:00-07:00 (-13d) | 2026-09-01T11:36:00-07:00 → 2026-08-19T09:36:00-07:00 (-13d) |
| A-1077 | Adhesive anchor installation — FAB2 L2 deck — bay D2 | 2026-09-01T11:36:00-07:00 → 2026-08-19T09:36:00-07:00 (-13d) | 2026-09-02T07:06:00-07:00 → 2026-08-19T15:06:00-07:00 (-14d) |
| A-1078 | Spray-applied fireproofing — FAB2 L2 deck — bay D2 | 2026-09-03T08:48:00-07:00 → 2026-08-21T14:48:00-07:00 (-13d) | 2026-09-04T08:30:00-07:00 → 2026-08-22T14:30:00-07:00 (-13d) |
| A-1079 | Structural steel high-build coating — FAB2 L2 deck — bay D2 | 2026-09-08T12:30:00-07:00 → 2026-08-26T08:30:00-07:00 (-13d) | 2026-09-09T07:42:00-07:00 → 2026-08-26T13:42:00-07:00 (-14d) |
| A-1080 | MEP hanger & rough-in — FAB2 L2 deck — bay D2 | 2026-09-09T07:42:00-07:00 → 2026-08-26T13:42:00-07:00 (-14d) | 2026-09-12T11:00:00-07:00 → 2026-08-31T07:00:00-07:00 (-12d) |
| A-1081 | Layout & survey control — FAB2 L3 deck — bay A3 | 2026-08-10T06:24:00-07:00 → 2026-07-29T06:24:00-07:00 (-12d) | 2026-08-11T07:30:00-07:00 → 2026-07-30T07:30:00-07:00 (-12d) |
| A-1082 | Formwork & rebar placement — FAB2 L3 deck — bay A3 | 2026-08-11T07:30:00-07:00 → 2026-07-30T07:30:00-07:00 (-12d) | 2026-08-14T12:06:00-07:00 → 2026-08-03T12:06:00-07:00 (-11d) |
| A-1083 | Slab pour — FAB2 L3 deck — bay A3 | 2026-08-14T12:06:00-07:00 → 2026-08-03T12:06:00-07:00 (-11d) | 2026-08-15T09:24:00-07:00 → 2026-08-04T09:24:00-07:00 (-11d) |
| A-1084 | Slab finish & curing compound — FAB2 L3 deck — bay A3 | 2026-08-15T09:24:00-07:00 → 2026-08-04T09:24:00-07:00 (-11d) | 2026-08-17T09:30:00-07:00 → 2026-08-05T09:30:00-07:00 (-12d) |
| A-1085 | Structural steel erection — FAB2 L3 deck — bay A3 | 2026-08-22T07:30:00-07:00 → 2026-08-11T07:30:00-07:00 (-11d) | 2026-08-26T14:30:00-07:00 → 2026-08-14T14:30:00-07:00 (-12d) |
| A-1086 | Deck weld & shear stud installation — FAB2 L3 deck — bay A3 | 2026-08-26T14:30:00-07:00 → 2026-08-14T14:30:00-07:00 (-12d) | 2026-08-27T12:24:00-07:00 → 2026-08-15T12:24:00-07:00 (-12d) |
| A-1087 | Adhesive anchor installation — FAB2 L3 deck — bay A3 | 2026-08-27T12:24:00-07:00 → 2026-08-15T12:24:00-07:00 (-12d) | 2026-08-28T06:48:00-07:00 → 2026-08-17T06:48:00-07:00 (-11d) |
| A-1088 | Spray-applied fireproofing — FAB2 L3 deck — bay A3 | 2026-09-04T08:48:00-07:00 → 2026-08-22T14:48:00-07:00 (-13d) | 2026-09-05T10:30:00-07:00 → 2026-08-25T06:30:00-07:00 (-11d) |
| A-1089 | Structural steel high-build coating — FAB2 L3 deck — bay A3 | 2026-09-09T14:30:00-07:00 → 2026-08-27T10:30:00-07:00 (-13d) | 2026-09-10T11:24:00-07:00 → 2026-08-28T07:24:00-07:00 (-13d) |
| A-1090 | MEP hanger & rough-in — FAB2 L3 deck — bay A3 | 2026-09-10T11:24:00-07:00 → 2026-08-28T07:24:00-07:00 (-13d) | 2026-09-14T13:12:00-07:00 → 2026-09-01T09:12:00-07:00 (-13d) |
| A-1091 | Layout & survey control — FAB2 L3 deck — bay B3 | 2026-08-12T07:48:00-07:00 → 2026-07-30T13:48:00-07:00 (-13d) | 2026-08-13T09:12:00-07:00 → 2026-07-31T15:12:00-07:00 (-13d) |
| A-1092 | Formwork & rebar placement — FAB2 L3 deck — bay B3 | 2026-08-13T09:12:00-07:00 → 2026-07-31T15:12:00-07:00 (-13d) | 2026-08-15T15:06:00-07:00 → 2026-08-04T11:06:00-07:00 (-11d) |
| A-1093 | Slab pour — FAB2 L3 deck — bay B3 | 2026-08-15T15:06:00-07:00 → 2026-08-04T11:06:00-07:00 (-11d) | 2026-08-17T12:24:00-07:00 → 2026-08-05T08:24:00-07:00 (-12d) |
| A-1094 | Slab finish & curing compound — FAB2 L3 deck — bay B3 | 2026-08-17T12:24:00-07:00 → 2026-08-05T08:24:00-07:00 (-12d) | 2026-08-18T11:12:00-07:00 → 2026-08-06T07:12:00-07:00 (-12d) |
| A-1095 | Structural steel erection — FAB2 L3 deck — bay B3 | 2026-08-24T09:12:00-07:00 → 2026-08-11T15:12:00-07:00 (-13d) | 2026-08-28T15:36:00-07:00 → 2026-08-17T11:36:00-07:00 (-11d) |
| A-1096 | Deck weld & shear stud installation — FAB2 L3 deck — bay B3 | 2026-08-28T15:36:00-07:00 → 2026-08-17T11:36:00-07:00 (-11d) | 2026-08-29T14:48:00-07:00 → 2026-08-18T10:48:00-07:00 (-11d) |
| A-1097 | Adhesive anchor installation — FAB2 L3 deck — bay B3 | 2026-08-29T14:48:00-07:00 → 2026-08-18T10:48:00-07:00 (-11d) | 2026-08-31T09:36:00-07:00 → 2026-08-18T15:36:00-07:00 (-13d) |
| A-1098 | Spray-applied fireproofing — FAB2 L3 deck — bay B3 | 2026-09-05T08:48:00-07:00 → 2026-08-24T14:48:00-07:00 (-12d) | 2026-09-08T10:42:00-07:00 → 2026-08-26T06:42:00-07:00 (-13d) |
| A-1099 | Structural steel high-build coating — FAB2 L3 deck — bay B3 | 2026-09-10T14:42:00-07:00 → 2026-08-28T10:42:00-07:00 (-13d) | 2026-09-11T11:12:00-07:00 → 2026-08-29T07:12:00-07:00 (-13d) |
| A-1100 | MEP hanger & rough-in — FAB2 L3 deck — bay B3 | 2026-09-11T11:12:00-07:00 → 2026-08-29T07:12:00-07:00 (-13d) | 2026-09-15T07:12:00-07:00 → 2026-09-01T13:12:00-07:00 (-14d) |
| A-1101 | Layout & survey control — FAB2 L3 deck — bay C3 | 2026-08-12T11:00:00-07:00 → 2026-07-30T13:00:00-07:00 (-13d) | 2026-08-13T12:48:00-07:00 → 2026-07-31T14:48:00-07:00 (-13d) |
| A-1102 | Formwork & rebar placement — FAB2 L3 deck — bay C3 | 2026-08-13T12:48:00-07:00 → 2026-07-31T14:48:00-07:00 (-13d) | 2026-08-17T15:18:00-07:00 → 2026-08-05T07:18:00-07:00 (-12d) |
| A-1103 | Slab pour — FAB2 L3 deck — bay C3 | 2026-08-17T15:18:00-07:00 → 2026-08-05T07:18:00-07:00 (-12d) | 2026-08-18T12:36:00-07:00 → 2026-08-05T14:36:00-07:00 (-13d) |
| A-1104 | Slab finish & curing compound — FAB2 L3 deck — bay C3 | 2026-08-18T12:36:00-07:00 → 2026-08-05T14:36:00-07:00 (-13d) | 2026-08-19T14:18:00-07:00 → 2026-08-07T06:18:00-07:00 (-12d) |
| A-1105 | Structural steel erection — FAB2 L3 deck — bay C3 | 2026-08-25T12:18:00-07:00 → 2026-08-12T14:18:00-07:00 (-13d) | 2026-08-29T09:00:00-07:00 → 2026-08-17T11:00:00-07:00 (-12d) |
| A-1106 | Deck weld & shear stud installation — FAB2 L3 deck — bay C3 | 2026-08-29T09:00:00-07:00 → 2026-08-17T11:00:00-07:00 (-12d) | 2026-08-31T07:36:00-07:00 → 2026-08-18T09:36:00-07:00 (-13d) |
| A-1107 | Adhesive anchor installation — FAB2 L3 deck — bay C3 | 2026-08-31T07:36:00-07:00 → 2026-08-18T09:36:00-07:00 (-13d) | 2026-08-31T12:54:00-07:00 → 2026-08-18T14:54:00-07:00 (-13d) |
| A-1108 | Spray-applied fireproofing — FAB2 L3 deck — bay C3 | 2026-09-08T08:48:00-07:00 → 2026-08-25T14:48:00-07:00 (-14d) | 2026-09-09T10:24:00-07:00 → 2026-08-27T06:24:00-07:00 (-13d) |
| A-1109 | Structural steel high-build coating — FAB2 L3 deck — bay C3 | 2026-09-11T14:24:00-07:00 → 2026-08-29T10:24:00-07:00 (-13d) | 2026-09-12T11:06:00-07:00 → 2026-08-31T07:06:00-07:00 (-12d) |
| A-1110 | MEP hanger & rough-in — FAB2 L3 deck — bay C3 | 2026-09-12T11:06:00-07:00 → 2026-08-31T07:06:00-07:00 (-12d) | 2026-09-16T09:00:00-07:00 → 2026-09-02T15:00:00-07:00 (-14d) |
| A-1111 | Layout & survey control — FAB2 L3 deck — bay D3 | 2026-08-13T13:54:00-07:00 → 2026-07-31T11:54:00-07:00 (-13d) | 2026-08-14T14:18:00-07:00 → 2026-08-01T12:18:00-07:00 (-13d) |
| A-1112 | Formwork & rebar placement — FAB2 L3 deck — bay D3 | 2026-08-14T14:18:00-07:00 → 2026-08-01T12:18:00-07:00 (-13d) | 2026-08-18T12:00:00-07:00 → 2026-08-05T10:00:00-07:00 (-13d) |
| A-1113 | Slab pour — FAB2 L3 deck — bay D3 | 2026-08-18T12:00:00-07:00 → 2026-08-05T10:00:00-07:00 (-13d) | 2026-08-19T10:54:00-07:00 → 2026-08-06T08:54:00-07:00 (-13d) |
| A-1114 | Slab finish & curing compound — FAB2 L3 deck — bay D3 | 2026-08-19T10:54:00-07:00 → 2026-08-06T08:54:00-07:00 (-13d) | 2026-08-20T11:54:00-07:00 → 2026-08-07T09:54:00-07:00 (-13d) |
| A-1115 | Structural steel erection — FAB2 L3 deck — bay D3 | 2026-08-26T09:54:00-07:00 → 2026-08-13T07:54:00-07:00 (-13d) | 2026-08-31T07:12:00-07:00 → 2026-08-17T15:12:00-07:00 (-14d) |
| A-1116 | Deck weld & shear stud installation — FAB2 L3 deck — bay D3 | 2026-08-31T07:12:00-07:00 → 2026-08-17T15:12:00-07:00 (-14d) | 2026-08-31T14:54:00-07:00 → 2026-08-18T12:54:00-07:00 (-13d) |
| A-1117 | Adhesive anchor installation — FAB2 L3 deck — bay D3 | 2026-08-31T14:54:00-07:00 → 2026-08-18T12:54:00-07:00 (-13d) | 2026-09-01T10:54:00-07:00 → 2026-08-19T08:54:00-07:00 (-13d) |
| A-1118 | Spray-applied fireproofing — FAB2 L3 deck — bay D3 | 2026-09-09T08:48:00-07:00 → 2026-08-26T14:48:00-07:00 (-14d) | 2026-09-10T09:54:00-07:00 → 2026-08-27T15:54:00-07:00 (-14d) |
| A-1119 | Structural steel high-build coating — FAB2 L3 deck — bay D3 | 2026-09-12T13:54:00-07:00 → 2026-08-31T09:54:00-07:00 (-12d) | 2026-09-14T10:36:00-07:00 → 2026-09-01T06:36:00-07:00 (-13d) |
| A-1120 | MEP hanger & rough-in — FAB2 L3 deck — bay D3 | 2026-09-14T10:36:00-07:00 → 2026-09-01T06:36:00-07:00 (-13d) | 2026-09-17T13:54:00-07:00 → 2026-09-04T09:54:00-07:00 (-13d) |
| A-1121 | Layout & survey control — FAB2 Perimeter facade — bay A4 | 2026-08-10T06:24:00-07:00 → 2026-07-29T06:24:00-07:00 (-12d) | 2026-08-10T15:00:00-07:00 → 2026-07-29T15:00:00-07:00 (-12d) |
| A-1122 | Formwork & rebar placement — FAB2 Perimeter facade — bay A4 | 2026-08-10T15:00:00-07:00 → 2026-07-29T15:00:00-07:00 (-12d) | 2026-08-14T09:12:00-07:00 → 2026-08-03T09:12:00-07:00 (-11d) |
| A-1123 | Slab pour — FAB2 Perimeter facade — bay A4 | 2026-08-14T09:12:00-07:00 → 2026-08-03T09:12:00-07:00 (-11d) | 2026-08-15T08:42:00-07:00 → 2026-08-04T08:42:00-07:00 (-11d) |
| A-1124 | Slab finish & curing compound — FAB2 Perimeter facade — bay A4 | 2026-08-15T08:42:00-07:00 → 2026-08-04T08:42:00-07:00 (-11d) | 2026-08-17T08:18:00-07:00 → 2026-08-05T08:18:00-07:00 (-12d) |
| A-1125 | Structural steel erection — FAB2 Perimeter facade — bay A4 | 2026-08-22T06:18:00-07:00 → 2026-08-11T06:18:00-07:00 (-11d) | 2026-08-27T13:24:00-07:00 → 2026-08-15T13:24:00-07:00 (-12d) |
| A-1126 | Deck weld & shear stud installation — FAB2 Perimeter facade — bay A4 | 2026-08-27T13:24:00-07:00 → 2026-08-15T13:24:00-07:00 (-12d) | 2026-08-28T11:12:00-07:00 → 2026-08-17T11:12:00-07:00 (-11d) |
| A-1127 | Adhesive anchor installation — FAB2 Perimeter facade — bay A4 | 2026-08-28T11:12:00-07:00 → 2026-08-17T11:12:00-07:00 (-11d) | 2026-08-29T07:00:00-07:00 → 2026-08-18T07:00:00-07:00 (-11d) |
| A-1128 | Spray-applied fireproofing — FAB2 Perimeter facade — bay A4 | 2026-09-10T08:48:00-07:00 → 2026-08-27T14:48:00-07:00 (-14d) | 2026-09-11T08:18:00-07:00 → 2026-08-28T14:18:00-07:00 (-14d) |
| A-1129 | Structural steel high-build coating — FAB2 Perimeter facade — bay A4 | 2026-09-14T12:18:00-07:00 → 2026-09-01T08:18:00-07:00 (-13d) | 2026-09-15T08:48:00-07:00 → 2026-09-01T14:48:00-07:00 (-14d) |
| A-1130 | MEP hanger & rough-in — FAB2 Perimeter facade — bay A4 | 2026-09-15T08:48:00-07:00 → 2026-09-01T14:48:00-07:00 (-14d) | 2026-09-18T07:18:00-07:00 → 2026-09-04T13:18:00-07:00 (-14d) |
| A-1131 | Layout & survey control — FAB2 Perimeter facade — bay B4 | 2026-08-12T07:48:00-07:00 → 2026-07-30T13:48:00-07:00 (-13d) | 2026-08-13T06:36:00-07:00 → 2026-07-31T12:36:00-07:00 (-13d) |
| A-1132 | Formwork & rebar placement — FAB2 Perimeter facade — bay B4 | 2026-08-13T06:36:00-07:00 → 2026-07-31T12:36:00-07:00 (-13d) | 2026-08-17T09:18:00-07:00 → 2026-08-04T15:18:00-07:00 (-13d) |
| A-1133 | Slab pour — FAB2 Perimeter facade — bay B4 | 2026-08-17T09:18:00-07:00 → 2026-08-04T15:18:00-07:00 (-13d) | 2026-08-18T08:30:00-07:00 → 2026-08-05T14:30:00-07:00 (-13d) |
| A-1134 | Slab finish & curing compound — FAB2 Perimeter facade — bay B4 | 2026-08-18T08:30:00-07:00 → 2026-08-05T14:30:00-07:00 (-13d) | 2026-08-19T09:00:00-07:00 → 2026-08-06T15:00:00-07:00 (-13d) |
| A-1135 | Structural steel erection — FAB2 Perimeter facade — bay B4 | 2026-08-25T07:00:00-07:00 → 2026-08-12T13:00:00-07:00 (-13d) | 2026-08-28T11:18:00-07:00 → 2026-08-17T07:18:00-07:00 (-11d) |
| A-1136 | Deck weld & shear stud installation — FAB2 Perimeter facade — bay B4 | 2026-08-28T11:18:00-07:00 → 2026-08-17T07:18:00-07:00 (-11d) | 2026-08-29T09:30:00-07:00 → 2026-08-17T15:30:00-07:00 (-12d) |
| A-1137 | Adhesive anchor installation — FAB2 Perimeter facade — bay B4 | 2026-08-29T09:30:00-07:00 → 2026-08-17T15:30:00-07:00 (-12d) | 2026-08-29T15:12:00-07:00 → 2026-08-18T11:12:00-07:00 (-11d) |
| A-1138 | Spray-applied fireproofing — FAB2 Perimeter facade — bay B4 | 2026-09-11T08:48:00-07:00 → 2026-08-28T14:48:00-07:00 (-14d) | 2026-09-12T08:24:00-07:00 → 2026-08-29T14:24:00-07:00 (-14d) |
| A-1139 | Structural steel high-build coating — FAB2 Perimeter facade — bay B4 | 2026-09-15T12:24:00-07:00 → 2026-09-02T08:24:00-07:00 (-13d) | 2026-09-16T08:18:00-07:00 → 2026-09-02T14:18:00-07:00 (-14d) |
| A-1140 | MEP hanger & rough-in — FAB2 Perimeter facade — bay B4 | 2026-09-16T08:18:00-07:00 → 2026-09-02T14:18:00-07:00 (-14d) | 2026-09-19T06:12:00-07:00 → 2026-09-05T12:12:00-07:00 (-14d) |

| ID | Task | Start | Finish |
| --- | --- | --- | --- |
| A-1141 | Excavation & subgrade prep — CUB grade — bay A1 | 2026-08-14T14:00:00-07:00 → 2026-08-14T13:00:00-07:00 | 2026-08-18T06:54:00-07:00 → 2026-08-17T15:54:00-07:00 (-1d) |
| A-1142 | Equipment pad pour — CUB grade — bay A1 | 2026-08-18T06:54:00-07:00 → 2026-08-17T15:54:00-07:00 (-1d) | 2026-08-18T15:30:00-07:00 → 2026-08-18T14:30:00-07:00 |
| A-1143 | Anchor bolt & adhesive anchor set — CUB grade — bay A1 | 2026-08-21T09:30:00-07:00 → 2026-08-21T08:30:00-07:00 | 2026-08-21T14:36:00-07:00 → 2026-08-21T13:36:00-07:00 |
| A-1144 | Equipment set & alignment — CUB grade — bay A1 | 2026-08-21T14:36:00-07:00 → 2026-08-21T13:36:00-07:00 | 2026-08-25T15:48:00-07:00 → 2026-08-25T14:48:00-07:00 |
| A-1145 | Pipe rack erection — CUB grade — bay A1 | 2026-08-25T15:48:00-07:00 → 2026-08-25T14:48:00-07:00 | 2026-08-27T14:18:00-07:00 → 2026-08-27T13:18:00-07:00 |
| A-1146 | Pipe rack & equipment coating — CUB grade — bay A1 | 2026-08-27T14:18:00-07:00 → 2026-08-27T13:18:00-07:00 | 2026-08-28T09:48:00-07:00 → 2026-08-28T08:48:00-07:00 |
| A-1147 | Conduit, grounding & terminations — CUB grade — bay A1 | 2026-08-29T10:18:00-07:00 → 2026-08-29T09:18:00-07:00 | 2026-09-02T13:18:00-07:00 → 2026-09-02T12:18:00-07:00 |
| A-1148 | Excavation & subgrade prep — CUB grade — bay B1 | 2026-08-15T06:00:00-07:00 → 2026-08-14T11:00:00-07:00 (-1d) | 2026-08-18T09:48:00-07:00 → 2026-08-17T14:48:00-07:00 (-1d) |
| A-1149 | Equipment pad pour — CUB grade — bay B1 | 2026-08-18T09:48:00-07:00 → 2026-08-17T14:48:00-07:00 (-1d) | 2026-08-19T07:18:00-07:00 → 2026-08-18T12:18:00-07:00 (-1d) |
| A-1150 | Anchor bolt & adhesive anchor set — CUB grade — bay B1 | 2026-08-21T11:18:00-07:00 → 2026-08-21T06:18:00-07:00 | 2026-08-21T15:36:00-07:00 → 2026-08-21T10:36:00-07:00 |
| A-1151 | Equipment set & alignment — CUB grade — bay B1 | 2026-08-21T15:36:00-07:00 → 2026-08-21T10:36:00-07:00 | 2026-08-25T13:12:00-07:00 → 2026-08-25T08:12:00-07:00 |
| A-1152 | Pipe rack erection — CUB grade — bay B1 | 2026-08-25T13:12:00-07:00 → 2026-08-25T08:12:00-07:00 | 2026-08-28T06:12:00-07:00 → 2026-08-27T11:12:00-07:00 (-1d) |
| A-1153 | Pipe rack & equipment coating — CUB grade — bay B1 | 2026-08-28T06:12:00-07:00 → 2026-08-27T11:12:00-07:00 (-1d) | 2026-08-28T13:24:00-07:00 → 2026-08-28T08:24:00-07:00 |
| A-1154 | Conduit, grounding & terminations — CUB grade — bay B1 | 2026-08-29T12:12:00-07:00 → 2026-08-29T07:12:00-07:00 | 2026-09-02T09:30:00-07:00 → 2026-09-01T14:30:00-07:00 (-1d) |
| A-1155 | Excavation & subgrade prep — CUB grade — bay C1 | 2026-08-17T10:00:00-07:00 → 2026-08-15T11:00:00-07:00 (-2d) | 2026-08-19T08:12:00-07:00 → 2026-08-18T09:12:00-07:00 (-1d) |
| A-1156 | Equipment pad pour — CUB grade — bay C1 | 2026-08-19T08:12:00-07:00 → 2026-08-18T09:12:00-07:00 (-1d) | 2026-08-20T06:18:00-07:00 → 2026-08-19T07:18:00-07:00 (-1d) |
| A-1157 | Anchor bolt & adhesive anchor set — CUB grade — bay C1 | 2026-08-22T10:18:00-07:00 → 2026-08-21T11:18:00-07:00 (-1d) | 2026-08-22T15:18:00-07:00 → 2026-08-22T06:18:00-07:00 |
| A-1158 | Equipment set & alignment — CUB grade — bay C1 | 2026-08-22T15:18:00-07:00 → 2026-08-22T06:18:00-07:00 | 2026-08-26T13:12:00-07:00 → 2026-08-25T14:12:00-07:00 (-1d) |
| A-1159 | Pipe rack erection — CUB grade — bay C1 | 2026-08-26T13:12:00-07:00 → 2026-08-25T14:12:00-07:00 (-1d) | 2026-08-28T10:48:00-07:00 → 2026-08-27T11:48:00-07:00 (-1d) |
| A-1160 | Pipe rack & equipment coating — CUB grade — bay C1 | 2026-08-28T10:48:00-07:00 → 2026-08-27T11:48:00-07:00 (-1d) | 2026-08-29T06:24:00-07:00 → 2026-08-28T07:24:00-07:00 (-1d) |
| A-1161 | Conduit, grounding & terminations — CUB grade — bay C1 | 2026-08-31T06:48:00-07:00 → 2026-08-29T07:48:00-07:00 (-2d) | 2026-09-02T13:12:00-07:00 → 2026-09-01T14:12:00-07:00 (-1d) |
| A-1162 | Excavation & subgrade prep — CUB L2 — bay A2 | 2026-08-17T10:00:00-07:00 → 2026-08-15T07:00:00-07:00 (-2d) | 2026-08-19T08:12:00-07:00 → 2026-08-17T15:12:00-07:00 (-2d) |
| A-1163 | Equipment pad pour — CUB L2 — bay A2 | 2026-08-19T08:12:00-07:00 → 2026-08-17T15:12:00-07:00 (-2d) | 2026-08-19T15:42:00-07:00 → 2026-08-18T12:42:00-07:00 (-1d) |
| A-1164 | Anchor bolt & adhesive anchor set — CUB L2 — bay A2 | 2026-08-22T09:42:00-07:00 → 2026-08-21T06:42:00-07:00 (-1d) | 2026-08-22T14:06:00-07:00 → 2026-08-21T11:06:00-07:00 (-1d) |
| A-1165 | Equipment set & alignment — CUB L2 — bay A2 | 2026-08-22T14:06:00-07:00 → 2026-08-21T11:06:00-07:00 (-1d) | 2026-08-26T14:48:00-07:00 → 2026-08-25T11:48:00-07:00 (-1d) |
| A-1166 | Pipe rack erection — CUB L2 — bay A2 | 2026-08-26T14:48:00-07:00 → 2026-08-25T11:48:00-07:00 (-1d) | 2026-08-29T08:06:00-07:00 → 2026-08-27T15:06:00-07:00 (-2d) |
| A-1167 | Pipe rack & equipment coating — CUB L2 — bay A2 | 2026-08-29T08:06:00-07:00 → 2026-08-27T15:06:00-07:00 (-2d) | 2026-08-29T14:00:00-07:00 → 2026-08-28T11:00:00-07:00 (-1d) |
| A-1168 | Conduit, grounding & terminations — CUB L2 — bay A2 | 2026-08-31T14:06:00-07:00 → 2026-08-29T11:06:00-07:00 (-2d) | 2026-09-03T15:12:00-07:00 → 2026-09-02T12:12:00-07:00 (-1d) |
| A-1169 | Excavation & subgrade prep — CUB L2 — bay B2 | 2026-08-18T10:00:00-07:00 → 2026-08-15T13:00:00-07:00 (-3d) | 2026-08-20T12:54:00-07:00 → 2026-08-18T15:54:00-07:00 (-2d) |
| A-1170 | Equipment pad pour — CUB L2 — bay B2 | 2026-08-20T12:54:00-07:00 → 2026-08-18T15:54:00-07:00 (-2d) | 2026-08-21T10:36:00-07:00 → 2026-08-19T13:36:00-07:00 (-2d) |
| A-1171 | Anchor bolt & adhesive anchor set — CUB L2 — bay B2 | 2026-08-24T14:36:00-07:00 → 2026-08-22T07:36:00-07:00 (-2d) | 2026-08-25T09:12:00-07:00 → 2026-08-22T12:12:00-07:00 (-3d) |
| A-1172 | Equipment set & alignment — CUB L2 — bay B2 | 2026-08-25T09:12:00-07:00 → 2026-08-22T12:12:00-07:00 (-3d) | 2026-08-28T09:06:00-07:00 → 2026-08-26T12:06:00-07:00 (-2d) |
| A-1173 | Pipe rack erection — CUB L2 — bay B2 | 2026-08-28T09:06:00-07:00 → 2026-08-26T12:06:00-07:00 (-2d) | 2026-08-31T09:12:00-07:00 → 2026-08-28T12:12:00-07:00 (-3d) |
| A-1174 | Pipe rack & equipment coating — CUB L2 — bay B2 | 2026-08-31T09:12:00-07:00 → 2026-08-28T12:12:00-07:00 (-3d) | 2026-08-31T14:54:00-07:00 → 2026-08-29T07:54:00-07:00 (-2d) |
| A-1175 | Conduit, grounding & terminations — CUB L2 — bay B2 | 2026-09-01T15:12:00-07:00 → 2026-08-31T08:12:00-07:00 (-1d) | 2026-09-05T06:06:00-07:00 → 2026-09-03T09:06:00-07:00 (-2d) |
| A-1176 | Subgrade & vapour barrier — WHSE grade — bay A1 | 2026-08-21T06:00:00-07:00 → 2026-08-05T10:00:00-07:00 (-16d) | 2026-08-22T14:06:00-07:00 → 2026-08-07T08:06:00-07:00 (-15d) |
| A-1177 | Slab on grade pour — WHSE grade — bay A1 | 2026-08-22T14:06:00-07:00 → 2026-08-07T08:06:00-07:00 (-15d) | 2026-08-24T12:06:00-07:00 → 2026-08-08T06:06:00-07:00 (-16d) |
| A-1178 | Precast panel erection — WHSE grade — bay A1 | 2026-09-01T14:06:00-07:00 → 2026-08-17T08:06:00-07:00 (-15d) | 2026-09-05T08:54:00-07:00 → 2026-08-20T12:54:00-07:00 (-16d) |
| A-1179 | Connection weld — WHSE grade — bay A1 | 2026-09-05T08:54:00-07:00 → 2026-08-20T12:54:00-07:00 (-16d) | 2026-09-08T06:54:00-07:00 → 2026-08-21T10:54:00-07:00 (-18d) |
| A-1180 | Panel joint sealant — WHSE grade — bay A1 | 2026-09-08T06:54:00-07:00 → 2026-08-21T10:54:00-07:00 (-18d) | 2026-09-08T14:00:00-07:00 → 2026-08-22T08:00:00-07:00 (-17d) |
| A-1181 | Spray-applied fireproofing — WHSE grade — bay A1 | 2026-09-08T14:00:00-07:00 → 2026-08-22T08:00:00-07:00 (-17d) | 2026-09-09T15:06:00-07:00 → 2026-08-24T09:06:00-07:00 (-16d) |
| A-1182 | Interior floor marking — WHSE grade — bay A1 | 2026-09-12T09:06:00-07:00 → 2026-08-26T13:06:00-07:00 (-17d) | 2026-09-12T14:24:00-07:00 → 2026-08-27T08:24:00-07:00 (-16d) |
| A-1183 | Subgrade & vapour barrier — WHSE grade — bay B1 | 2026-08-24T06:00:00-07:00 → 2026-08-07T06:00:00-07:00 (-17d) | 2026-08-25T13:54:00-07:00 → 2026-08-08T13:54:00-07:00 (-17d) |
| A-1184 | Slab on grade pour — WHSE grade — bay B1 | 2026-08-25T13:54:00-07:00 → 2026-08-08T13:54:00-07:00 (-17d) | 2026-08-26T13:12:00-07:00 → 2026-08-10T13:12:00-07:00 (-16d) |
| A-1185 | Precast panel erection — WHSE grade — bay B1 | 2026-09-03T15:12:00-07:00 → 2026-08-18T15:12:00-07:00 (-16d) | 2026-09-09T09:06:00-07:00 → 2026-08-22T09:06:00-07:00 (-18d) |
| A-1186 | Connection weld — WHSE grade — bay B1 | 2026-09-09T09:06:00-07:00 → 2026-08-22T09:06:00-07:00 (-18d) | 2026-09-10T06:12:00-07:00 → 2026-08-24T06:12:00-07:00 (-17d) |
| A-1187 | Panel joint sealant — WHSE grade — bay B1 | 2026-09-10T06:12:00-07:00 → 2026-08-24T06:12:00-07:00 (-17d) | 2026-09-10T12:18:00-07:00 → 2026-08-24T12:18:00-07:00 (-17d) |
| A-1188 | Spray-applied fireproofing — WHSE grade — bay B1 | 2026-09-10T12:18:00-07:00 → 2026-08-24T12:18:00-07:00 (-17d) | 2026-09-11T12:18:00-07:00 → 2026-08-25T12:18:00-07:00 (-17d) |
| A-1189 | Interior floor marking — WHSE grade — bay B1 | 2026-09-15T06:18:00-07:00 → 2026-08-28T06:18:00-07:00 (-18d) | 2026-09-15T11:48:00-07:00 → 2026-08-28T11:48:00-07:00 (-18d) |
| A-1190 | Subgrade & vapour barrier — WHSE grade — bay A2 | 2026-08-24T14:00:00-07:00 → 2026-08-07T10:00:00-07:00 (-17d) | 2026-08-26T09:54:00-07:00 → 2026-08-08T15:54:00-07:00 (-18d) |
| A-1191 | Slab on grade pour — WHSE grade — bay A2 | 2026-08-26T09:54:00-07:00 → 2026-08-08T15:54:00-07:00 (-18d) | 2026-08-27T07:18:00-07:00 → 2026-08-10T13:18:00-07:00 (-17d) |
| A-1192 | Precast panel erection — WHSE grade — bay A2 | 2026-09-04T09:18:00-07:00 → 2026-08-18T15:18:00-07:00 (-17d) | 2026-09-09T09:30:00-07:00 → 2026-08-21T15:30:00-07:00 (-19d) |
| A-1193 | Connection weld — WHSE grade — bay A2 | 2026-09-09T09:30:00-07:00 → 2026-08-21T15:30:00-07:00 (-19d) | 2026-09-10T08:12:00-07:00 → 2026-08-22T14:12:00-07:00 (-19d) |
| A-1194 | Panel joint sealant — WHSE grade — bay A2 | 2026-09-10T08:12:00-07:00 → 2026-08-22T14:12:00-07:00 (-19d) | 2026-09-10T14:36:00-07:00 → 2026-08-24T10:36:00-07:00 (-17d) |
| A-1195 | Spray-applied fireproofing — WHSE grade — bay A2 | 2026-09-10T14:36:00-07:00 → 2026-08-24T10:36:00-07:00 (-17d) | 2026-09-11T15:06:00-07:00 → 2026-08-25T11:06:00-07:00 (-17d) |
| A-1196 | Interior floor marking — WHSE grade — bay A2 | 2026-09-15T09:06:00-07:00 → 2026-08-27T15:06:00-07:00 (-19d) | 2026-09-15T13:48:00-07:00 → 2026-08-28T09:48:00-07:00 (-18d) |
| A-1197 | Subgrade & vapour barrier — WHSE grade — bay B2 | 2026-08-25T09:00:00-07:00 → 2026-08-07T11:00:00-07:00 (-18d) | 2026-08-26T14:42:00-07:00 → 2026-08-10T06:42:00-07:00 (-16d) |
| A-1198 | Slab on grade pour — WHSE grade — bay B2 | 2026-08-26T14:42:00-07:00 → 2026-08-10T06:42:00-07:00 (-16d) | 2026-08-27T13:48:00-07:00 → 2026-08-10T15:48:00-07:00 (-17d) |
| A-1199 | Precast panel erection — WHSE grade — bay B2 | 2026-09-04T15:48:00-07:00 → 2026-08-19T07:48:00-07:00 (-16d) | 2026-09-09T11:48:00-07:00 → 2026-08-21T13:48:00-07:00 (-19d) |
| A-1200 | Connection weld — WHSE grade — bay B2 | 2026-09-09T11:48:00-07:00 → 2026-08-21T13:48:00-07:00 (-19d) | 2026-09-10T10:12:00-07:00 → 2026-08-22T12:12:00-07:00 (-19d) |
| A-1201 | Panel joint sealant — WHSE grade — bay B2 | 2026-09-10T10:12:00-07:00 → 2026-08-22T12:12:00-07:00 (-19d) | 2026-09-11T08:18:00-07:00 → 2026-08-24T10:18:00-07:00 (-18d) |
| A-1202 | Spray-applied fireproofing — WHSE grade — bay B2 | 2026-09-11T08:18:00-07:00 → 2026-08-24T10:18:00-07:00 (-18d) | 2026-09-12T08:54:00-07:00 → 2026-08-25T10:54:00-07:00 (-18d) |
| A-1203 | Interior floor marking — WHSE grade — bay B2 | 2026-09-15T12:54:00-07:00 → 2026-08-27T14:54:00-07:00 (-19d) | 2026-09-16T07:24:00-07:00 → 2026-08-28T09:24:00-07:00 (-19d) |
| A-1204 | Excavation & subgrade prep — CT grade — bay A1 | 2026-08-24T12:00:00-07:00 → 2026-08-19T15:00:00-07:00 (-5d) | 2026-08-26T14:42:00-07:00 → 2026-08-22T07:42:00-07:00 (-4d) |
| A-1205 | Equipment pad pour — CT grade — bay A1 | 2026-08-26T14:42:00-07:00 → 2026-08-22T07:42:00-07:00 (-4d) | 2026-08-27T13:54:00-07:00 → 2026-08-24T06:54:00-07:00 (-3d) |
| A-1206 | Anchor bolt & adhesive anchor set — CT grade — bay A1 | 2026-08-31T07:54:00-07:00 → 2026-08-26T10:54:00-07:00 (-5d) | 2026-08-31T13:00:00-07:00 → 2026-08-27T06:00:00-07:00 (-4d) |
| A-1207 | Equipment set & alignment — CT grade — bay A1 | 2026-08-31T13:00:00-07:00 → 2026-08-27T06:00:00-07:00 (-4d) | 2026-09-03T08:36:00-07:00 → 2026-08-29T11:36:00-07:00 (-5d) |
| A-1208 | Pipe rack erection — CT grade — bay A1 | 2026-09-03T08:36:00-07:00 → 2026-08-29T11:36:00-07:00 (-5d) | 2026-09-05T06:00:00-07:00 → 2026-09-01T09:00:00-07:00 (-4d) |
| A-1209 | Pipe rack & equipment coating — CT grade — bay A1 | 2026-09-05T06:00:00-07:00 → 2026-09-01T09:00:00-07:00 (-4d) | 2026-09-05T11:24:00-07:00 → 2026-09-01T14:24:00-07:00 (-4d) |
| A-1210 | Conduit, grounding & terminations — CT grade — bay A1 | 2026-09-08T12:00:00-07:00 → 2026-09-02T15:00:00-07:00 (-6d) | 2026-09-11T15:54:00-07:00 → 2026-09-08T08:54:00-07:00 (-3d) |

| ID | Task | Start | Finish |
| --- | --- | --- | --- |
| A-1211 | Excavation & subgrade prep — CT grade — bay B1 | 2026-08-24T07:00:00-07:00 → 2026-08-19T06:00:00-07:00 (-5d) | 2026-08-25T14:12:00-07:00 → 2026-08-20T13:12:00-07:00 (-5d) |
| A-1212 | Equipment pad pour — CT grade — bay B1 | 2026-08-25T14:12:00-07:00 → 2026-08-20T13:12:00-07:00 (-5d) | 2026-08-26T11:30:00-07:00 → 2026-08-21T10:30:00-07:00 (-5d) |
| A-1213 | Anchor bolt & adhesive anchor set — CT grade — bay B1 | 2026-08-28T15:30:00-07:00 → 2026-08-24T14:30:00-07:00 (-4d) | 2026-08-29T11:24:00-07:00 → 2026-08-25T10:24:00-07:00 (-4d) |
| A-1214 | Equipment set & alignment — CT grade — bay B1 | 2026-08-29T11:24:00-07:00 → 2026-08-25T10:24:00-07:00 (-4d) | 2026-09-03T06:24:00-07:00 → 2026-08-28T15:24:00-07:00 (-6d) |
| A-1215 | Pipe rack erection — CT grade — bay B1 | 2026-09-03T06:24:00-07:00 → 2026-08-28T15:24:00-07:00 (-6d) | 2026-09-05T10:00:00-07:00 → 2026-09-01T09:00:00-07:00 (-4d) |
| A-1216 | Pipe rack & equipment coating — CT grade — bay B1 | 2026-09-05T10:00:00-07:00 → 2026-09-01T09:00:00-07:00 (-4d) | 2026-09-05T15:42:00-07:00 → 2026-09-01T14:42:00-07:00 (-4d) |
| A-1217 | Conduit, grounding & terminations — CT grade — bay B1 | 2026-09-09T06:00:00-07:00 → 2026-09-02T15:00:00-07:00 (-7d) | 2026-09-12T07:12:00-07:00 → 2026-09-08T06:12:00-07:00 (-4d) |
| A-1218 | Excavation & subgrade prep — CT L2 — bay A2 | 2026-08-24T12:00:00-07:00 → 2026-08-19T07:00:00-07:00 (-5d) | 2026-08-26T13:12:00-07:00 → 2026-08-21T08:12:00-07:00 (-5d) |
| A-1219 | Equipment pad pour — CT L2 — bay A2 | 2026-08-26T13:12:00-07:00 → 2026-08-21T08:12:00-07:00 (-5d) | 2026-08-27T12:30:00-07:00 → 2026-08-22T07:30:00-07:00 (-5d) |
| A-1220 | Anchor bolt & adhesive anchor set — CT L2 — bay A2 | 2026-08-31T06:30:00-07:00 → 2026-08-25T11:30:00-07:00 (-6d) | 2026-08-31T11:00:00-07:00 → 2026-08-26T06:00:00-07:00 (-5d) |
| A-1221 | Equipment set & alignment — CT L2 — bay A2 | 2026-08-31T11:00:00-07:00 → 2026-08-26T06:00:00-07:00 (-5d) | 2026-09-04T06:18:00-07:00 → 2026-08-29T11:18:00-07:00 (-6d) |
| A-1222 | Pipe rack erection — CT L2 — bay A2 | 2026-09-04T06:18:00-07:00 → 2026-08-29T11:18:00-07:00 (-6d) | 2026-09-05T15:42:00-07:00 → 2026-09-01T10:42:00-07:00 (-4d) |
| A-1223 | Pipe rack & equipment coating — CT L2 — bay A2 | 2026-09-05T15:42:00-07:00 → 2026-09-01T10:42:00-07:00 (-4d) | 2026-09-08T12:06:00-07:00 → 2026-09-02T07:06:00-07:00 (-6d) |
| A-1224 | Conduit, grounding & terminations — CT L2 — bay A2 | 2026-09-09T11:42:00-07:00 → 2026-09-03T06:42:00-07:00 (-6d) | 2026-09-14T07:36:00-07:00 → 2026-09-08T12:36:00-07:00 (-6d) |
| A-1225 | Excavation & duct bank — SUB grade — bay A1 | 2026-08-27T09:00:00-07:00 → 2026-08-07T15:00:00-07:00 (-20d) | 2026-08-31T07:36:00-07:00 → 2026-08-11T13:36:00-07:00 (-20d) |
| A-1226 | Duct bank encasement pour — SUB grade — bay A1 | 2026-08-31T07:36:00-07:00 → 2026-08-11T13:36:00-07:00 (-20d) | 2026-09-01T06:54:00-07:00 → 2026-08-12T12:54:00-07:00 (-20d) |
| A-1227 | Transformer pad pour — SUB grade — bay A1 | 2026-09-03T10:54:00-07:00 → 2026-08-15T06:54:00-07:00 (-19d) | 2026-09-04T08:18:00-07:00 → 2026-08-15T14:18:00-07:00 (-20d) |
| A-1228 | Anchor & baseplate grout — SUB grade — bay A1 | 2026-09-08T12:18:00-07:00 → 2026-08-19T08:18:00-07:00 (-20d) | 2026-09-09T08:12:00-07:00 → 2026-08-19T14:12:00-07:00 (-21d) |
| A-1229 | Switchgear set — SUB grade — bay A1 | 2026-09-09T08:12:00-07:00 → 2026-08-19T14:12:00-07:00 (-21d) | 2026-09-10T15:36:00-07:00 → 2026-08-21T11:36:00-07:00 (-20d) |
| A-1230 | Steel structure coating touch-up — SUB grade — bay A1 | 2026-09-10T15:36:00-07:00 → 2026-08-21T11:36:00-07:00 (-20d) | 2026-09-11T11:48:00-07:00 → 2026-08-22T07:48:00-07:00 (-20d) |
| A-1231 | Cable pull & termination — SUB grade — bay A1 | 2026-09-11T11:48:00-07:00 → 2026-08-22T07:48:00-07:00 (-20d) | 2026-09-16T06:36:00-07:00 → 2026-08-26T12:36:00-07:00 (-21d) |
| A-1232 | Excavation & duct bank — SUB grade — bay B1 | 2026-08-29T07:00:00-07:00 → 2026-08-10T09:00:00-07:00 (-19d) | 2026-09-01T15:06:00-07:00 → 2026-08-13T07:06:00-07:00 (-19d) |
| A-1233 | Duct bank encasement pour — SUB grade — bay B1 | 2026-09-01T15:06:00-07:00 → 2026-08-13T07:06:00-07:00 (-19d) | 2026-09-02T14:00:00-07:00 → 2026-08-14T06:00:00-07:00 (-19d) |
| A-1234 | Transformer pad pour — SUB grade — bay B1 | 2026-09-05T08:00:00-07:00 → 2026-08-17T10:00:00-07:00 (-19d) | 2026-09-05T15:54:00-07:00 → 2026-08-18T07:54:00-07:00 (-18d) |
| A-1235 | Anchor & baseplate grout — SUB grade — bay B1 | 2026-09-10T09:54:00-07:00 → 2026-08-20T11:54:00-07:00 (-21d) | 2026-09-10T14:36:00-07:00 → 2026-08-21T06:36:00-07:00 (-20d) |
| A-1236 | Switchgear set — SUB grade — bay B1 | 2026-09-10T14:36:00-07:00 → 2026-08-21T06:36:00-07:00 (-20d) | 2026-09-12T12:30:00-07:00 → 2026-08-22T14:30:00-07:00 (-21d) |
| A-1237 | Steel structure coating touch-up — SUB grade — bay B1 | 2026-09-12T12:30:00-07:00 → 2026-08-22T14:30:00-07:00 (-21d) | 2026-09-14T08:48:00-07:00 → 2026-08-24T10:48:00-07:00 (-21d) |
| A-1238 | Cable pull & termination — SUB grade — bay B1 | 2026-09-14T08:48:00-07:00 → 2026-08-24T10:48:00-07:00 (-21d) | 2026-09-17T14:42:00-07:00 → 2026-08-28T06:42:00-07:00 (-20d) |
| A-1239 | Excavation & duct bank — SUB L2 — bay A2 | 2026-08-27T14:00:00-07:00 → 2026-08-07T12:00:00-07:00 (-20d) | 2026-08-31T10:54:00-07:00 → 2026-08-11T08:54:00-07:00 (-20d) |
| A-1240 | Duct bank encasement pour — SUB L2 — bay A2 | 2026-08-31T10:54:00-07:00 → 2026-08-11T08:54:00-07:00 (-20d) | 2026-09-01T09:24:00-07:00 → 2026-08-12T07:24:00-07:00 (-20d) |
| A-1241 | Transformer pad pour — SUB L2 — bay A2 | 2026-09-03T13:24:00-07:00 → 2026-08-14T11:24:00-07:00 (-20d) | 2026-09-04T12:18:00-07:00 → 2026-08-15T10:18:00-07:00 (-20d) |
| A-1242 | Anchor & baseplate grout — SUB L2 — bay A2 | 2026-09-09T06:18:00-07:00 → 2026-08-18T14:18:00-07:00 (-22d) | 2026-09-09T10:42:00-07:00 → 2026-08-19T08:42:00-07:00 (-21d) |
| A-1243 | Switchgear set — SUB L2 — bay A2 | 2026-09-09T10:42:00-07:00 → 2026-08-19T08:42:00-07:00 (-21d) | 2026-09-11T12:30:00-07:00 → 2026-08-21T10:30:00-07:00 (-21d) |
| A-1244 | Steel structure coating touch-up — SUB L2 — bay A2 | 2026-09-11T12:30:00-07:00 → 2026-08-21T10:30:00-07:00 (-21d) | 2026-09-12T08:30:00-07:00 → 2026-08-22T06:30:00-07:00 (-21d) |
| A-1245 | Cable pull & termination — SUB L2 — bay A2 | 2026-09-12T08:30:00-07:00 → 2026-08-22T06:30:00-07:00 (-21d) | 2026-09-17T13:24:00-07:00 → 2026-08-27T11:24:00-07:00 (-21d) |
| A-1246 | Footing excavation — BULK grade — bay A1 | 2026-08-26T07:00:00-07:00 → 2026-08-15T11:00:00-07:00 (-11d) | 2026-08-27T11:36:00-07:00 → 2026-08-17T15:36:00-07:00 (-10d) |
| A-1247 | Foundation pour — BULK grade — bay A1 | 2026-08-27T11:36:00-07:00 → 2026-08-17T15:36:00-07:00 (-10d) | 2026-08-28T10:12:00-07:00 → 2026-08-18T14:12:00-07:00 (-10d) |
| A-1248 | CMU wall construction — BULK grade — bay A1 | 2026-09-03T08:12:00-07:00 → 2026-08-24T12:12:00-07:00 (-10d) | 2026-09-04T07:36:00-07:00 → 2026-08-25T11:36:00-07:00 (-10d) |
| A-1249 | Bond beam & cell grouting — BULK grade — bay A1 | 2026-09-04T07:36:00-07:00 → 2026-08-25T11:36:00-07:00 (-10d) | 2026-09-05T06:12:00-07:00 → 2026-08-26T10:12:00-07:00 (-10d) |
| A-1250 | Steel lintel & joist weld — BULK grade — bay A1 | 2026-09-05T06:12:00-07:00 → 2026-08-26T10:12:00-07:00 (-10d) | 2026-09-05T13:24:00-07:00 → 2026-08-27T07:24:00-07:00 (-9d) |
| A-1251 | Roof deck & waterproofing — BULK grade — bay A1 | 2026-09-05T13:24:00-07:00 → 2026-08-27T07:24:00-07:00 (-9d) | 2026-09-10T11:42:00-07:00 → 2026-08-29T15:42:00-07:00 (-12d) |
| A-1252 | Perimeter joint sealant — BULK grade — bay A1 | 2026-09-12T15:42:00-07:00 → 2026-09-02T09:42:00-07:00 (-10d) | 2026-09-14T12:18:00-07:00 → 2026-09-03T06:18:00-07:00 (-11d) |
| A-1253 | Interior fit-out — BULK grade — bay A1 | 2026-09-14T12:18:00-07:00 → 2026-09-03T06:18:00-07:00 (-11d) | 2026-09-19T07:48:00-07:00 → 2026-09-09T11:48:00-07:00 (-10d) |
| A-1254 | Footing excavation — BULK grade — bay B1 | 2026-08-26T07:00:00-07:00 → 2026-08-15T07:00:00-07:00 (-11d) | 2026-08-27T13:54:00-07:00 → 2026-08-17T13:54:00-07:00 (-10d) |
| A-1255 | Foundation pour — BULK grade — bay B1 | 2026-08-27T13:54:00-07:00 → 2026-08-17T13:54:00-07:00 (-10d) | 2026-08-28T12:12:00-07:00 → 2026-08-18T12:12:00-07:00 (-10d) |
| A-1256 | CMU wall construction — BULK grade — bay B1 | 2026-09-03T10:12:00-07:00 → 2026-08-24T10:12:00-07:00 (-10d) | 2026-09-04T08:42:00-07:00 → 2026-08-25T08:42:00-07:00 (-10d) |
| A-1257 | Bond beam & cell grouting — BULK grade — bay B1 | 2026-09-04T08:42:00-07:00 → 2026-08-25T08:42:00-07:00 (-10d) | 2026-09-05T07:30:00-07:00 → 2026-08-26T07:30:00-07:00 (-10d) |
| A-1258 | Steel lintel & joist weld — BULK grade — bay B1 | 2026-09-05T07:30:00-07:00 → 2026-08-26T07:30:00-07:00 (-10d) | 2026-09-05T14:42:00-07:00 → 2026-08-26T14:42:00-07:00 (-10d) |
| A-1259 | Roof deck & waterproofing — BULK grade — bay B1 | 2026-09-05T14:42:00-07:00 → 2026-08-26T14:42:00-07:00 (-10d) | 2026-09-10T07:00:00-07:00 → 2026-08-29T07:00:00-07:00 (-12d) |
| A-1260 | Perimeter joint sealant — BULK grade — bay B1 | 2026-09-12T11:00:00-07:00 → 2026-09-01T11:00:00-07:00 (-11d) | 2026-09-14T08:36:00-07:00 → 2026-09-02T08:36:00-07:00 (-12d) |
| A-1261 | Interior fit-out — BULK grade — bay B1 | 2026-09-14T08:36:00-07:00 → 2026-09-02T08:36:00-07:00 (-12d) | 2026-09-18T09:18:00-07:00 → 2026-09-08T09:18:00-07:00 (-10d) |
| A-1262 | Footing excavation — BULK L2 — bay A2 | 2026-08-26T11:00:00-07:00 → 2026-08-15T07:00:00-07:00 (-11d) | 2026-08-27T14:18:00-07:00 → 2026-08-17T10:18:00-07:00 (-10d) |
| A-1263 | Foundation pour — BULK L2 — bay A2 | 2026-08-27T14:18:00-07:00 → 2026-08-17T10:18:00-07:00 (-10d) | 2026-08-28T12:30:00-07:00 → 2026-08-18T08:30:00-07:00 (-10d) |
| A-1264 | CMU wall construction — BULK L2 — bay A2 | 2026-09-03T10:30:00-07:00 → 2026-08-24T06:30:00-07:00 (-10d) | 2026-09-04T10:36:00-07:00 → 2026-08-25T06:36:00-07:00 (-10d) |
| A-1265 | Bond beam & cell grouting — BULK L2 — bay A2 | 2026-09-04T10:36:00-07:00 → 2026-08-25T06:36:00-07:00 (-10d) | 2026-09-05T09:54:00-07:00 → 2026-08-25T15:54:00-07:00 (-11d) |
| A-1266 | Steel lintel & joist weld — BULK L2 — bay A2 | 2026-09-05T09:54:00-07:00 → 2026-08-25T15:54:00-07:00 (-11d) | 2026-09-08T07:00:00-07:00 → 2026-08-26T13:00:00-07:00 (-13d) |
| A-1267 | Roof deck & waterproofing — BULK L2 — bay A2 | 2026-09-08T07:00:00-07:00 → 2026-08-26T13:00:00-07:00 (-13d) | 2026-09-10T14:00:00-07:00 → 2026-08-29T10:00:00-07:00 (-12d) |
| A-1268 | Perimeter joint sealant — BULK L2 — bay A2 | 2026-09-14T08:00:00-07:00 → 2026-09-01T14:00:00-07:00 (-13d) | 2026-09-14T15:30:00-07:00 → 2026-09-02T11:30:00-07:00 (-12d) |
| A-1269 | Interior fit-out — BULK L2 — bay A2 | 2026-09-14T15:30:00-07:00 → 2026-09-02T11:30:00-07:00 (-12d) | 2026-09-19T10:42:00-07:00 → 2026-09-09T06:42:00-07:00 (-10d) |
| A-1270 | Footing excavation — CHEM grade — bay A1 | 2026-08-26T10:00:00-07:00 → 2026-08-14T12:00:00-07:00 (-12d) | 2026-08-27T13:00:00-07:00 → 2026-08-15T15:00:00-07:00 (-12d) |
| A-1271 | Foundation pour — CHEM grade — bay A1 | 2026-08-27T13:00:00-07:00 → 2026-08-15T15:00:00-07:00 (-12d) | 2026-08-28T10:54:00-07:00 → 2026-08-17T12:54:00-07:00 (-11d) |
| A-1272 | CMU wall construction — CHEM grade — bay A1 | 2026-09-03T08:54:00-07:00 → 2026-08-22T10:54:00-07:00 (-12d) | 2026-09-04T07:48:00-07:00 → 2026-08-24T09:48:00-07:00 (-11d) |
| A-1273 | Bond beam & cell grouting — CHEM grade — bay A1 | 2026-09-04T07:48:00-07:00 → 2026-08-24T09:48:00-07:00 (-11d) | 2026-09-05T07:24:00-07:00 → 2026-08-25T09:24:00-07:00 (-11d) |
| A-1274 | Steel lintel & joist weld — CHEM grade — bay A1 | 2026-09-05T07:24:00-07:00 → 2026-08-25T09:24:00-07:00 (-11d) | 2026-09-05T15:06:00-07:00 → 2026-08-26T07:06:00-07:00 (-10d) |
| A-1275 | Roof deck & waterproofing — CHEM grade — bay A1 | 2026-09-05T15:06:00-07:00 → 2026-08-26T07:06:00-07:00 (-10d) | 2026-09-10T06:24:00-07:00 → 2026-08-28T08:24:00-07:00 (-13d) |
| A-1276 | Perimeter joint sealant — CHEM grade — bay A1 | 2026-09-12T10:24:00-07:00 → 2026-08-31T12:24:00-07:00 (-12d) | 2026-09-14T08:30:00-07:00 → 2026-09-01T10:30:00-07:00 (-13d) |
| A-1277 | Interior fit-out — CHEM grade — bay A1 | 2026-09-14T08:30:00-07:00 → 2026-09-01T10:30:00-07:00 (-13d) | 2026-09-17T15:18:00-07:00 → 2026-09-05T07:18:00-07:00 (-12d) |
| A-1278 | Footing excavation — CHEM grade — bay B1 | 2026-08-26T14:00:00-07:00 → 2026-08-14T12:00:00-07:00 (-12d) | 2026-08-28T07:00:00-07:00 → 2026-08-15T15:00:00-07:00 (-13d) |
| A-1279 | Foundation pour — CHEM grade — bay B1 | 2026-08-28T07:00:00-07:00 → 2026-08-15T15:00:00-07:00 (-13d) | 2026-08-29T06:06:00-07:00 → 2026-08-17T14:06:00-07:00 (-12d) |
| A-1280 | CMU wall construction — CHEM grade — bay B1 | 2026-09-03T14:06:00-07:00 → 2026-08-22T12:06:00-07:00 (-12d) | 2026-09-04T14:00:00-07:00 → 2026-08-24T12:00:00-07:00 (-11d) |

| ID | Task | Start | Finish | Other |
| --- | --- | --- | --- | --- |
| A-1281 | Bond beam & cell grouting — CHEM grade — bay B1 | 2026-09-04T14:00:00-07:00 → 2026-08-24T12:00:00-07:00 (-11d) | 2026-09-05T13:18:00-07:00 → 2026-08-25T11:18:00-07:00 (-11d) |  |
| A-1282 | Steel lintel & joist weld — CHEM grade — bay B1 | 2026-09-05T13:18:00-07:00 → 2026-08-25T11:18:00-07:00 (-11d) | 2026-09-08T12:24:00-07:00 → 2026-08-26T10:24:00-07:00 (-13d) |  |
| A-1283 | Roof deck & waterproofing — CHEM grade — bay B1 | 2026-09-08T12:24:00-07:00 → 2026-08-26T10:24:00-07:00 (-13d) | 2026-09-11T09:42:00-07:00 → 2026-08-29T07:42:00-07:00 (-13d) |  |
| A-1284 | Perimeter joint sealant — CHEM grade — bay B1 | 2026-09-14T13:42:00-07:00 → 2026-09-01T11:42:00-07:00 (-13d) | 2026-09-15T12:00:00-07:00 → 2026-09-02T10:00:00-07:00 (-13d) |  |
| A-1285 | Interior fit-out — CHEM grade — bay B1 | 2026-09-15T12:00:00-07:00 → 2026-09-02T10:00:00-07:00 (-13d) | 2026-09-19T06:54:00-07:00 → 2026-09-05T14:54:00-07:00 (-14d) |  |
| A-1286 | Footing excavation — CHEM L2 — bay A2 | 2026-08-29T12:00:00-07:00 → 2026-08-18T06:00:00-07:00 (-11d) | 2026-09-01T07:48:00-07:00 → 2026-08-19T11:48:00-07:00 (-13d) |  |
| A-1287 | Foundation pour — CHEM L2 — bay A2 | 2026-09-01T07:48:00-07:00 → 2026-08-19T11:48:00-07:00 (-13d) | 2026-09-01T15:48:00-07:00 → 2026-08-20T09:48:00-07:00 (-12d) |  |
| A-1288 | CMU wall construction — CHEM L2 — bay A2 | 2026-09-08T13:48:00-07:00 → 2026-08-26T07:48:00-07:00 (-13d) | 2026-09-09T12:06:00-07:00 → 2026-08-27T06:06:00-07:00 (-13d) |  |
| A-1289 | Bond beam & cell grouting — CHEM L2 — bay A2 | 2026-09-09T12:06:00-07:00 → 2026-08-27T06:06:00-07:00 (-13d) | 2026-09-10T11:42:00-07:00 → 2026-08-27T15:42:00-07:00 (-14d) |  |
| A-1290 | Steel lintel & joist weld — CHEM L2 — bay A2 | 2026-09-10T11:42:00-07:00 → 2026-08-27T15:42:00-07:00 (-14d) | 2026-09-11T10:48:00-07:00 → 2026-08-28T14:48:00-07:00 (-14d) |  |
| A-1291 | Roof deck & waterproofing — CHEM L2 — bay A2 | 2026-09-11T10:48:00-07:00 → 2026-08-28T14:48:00-07:00 (-14d) | 2026-09-14T12:24:00-07:00 → 2026-09-01T06:24:00-07:00 (-13d) |  |
| A-1292 | Perimeter joint sealant — CHEM L2 — bay A2 | 2026-09-17T06:24:00-07:00 → 2026-09-03T10:24:00-07:00 (-14d) | 2026-09-17T14:24:00-07:00 → 2026-09-04T08:24:00-07:00 (-13d) |  |
| A-1293 | Interior fit-out — CHEM L2 — bay A2 | 2026-09-17T14:24:00-07:00 → 2026-09-04T08:24:00-07:00 (-13d) | 2026-09-23T08:30:00-07:00 → 2026-09-10T12:30:00-07:00 (-13d) |  |
| A-1294 | Footing excavation — ADMIN grade — bay A1 | 2026-10-12T14:00:00-07:00 → 2027-02-12T12:00:00-07:00 (+123d) | 2026-10-14T11:30:00-07:00 → 2027-02-16T09:30:00-07:00 (+125d) |  |
| A-1295 | Foundation pour (cold weather protection) — ADMIN grade — bay A1 | 2026-10-14T11:30:00-07:00 → 2027-02-16T09:30:00-07:00 (+125d) | 2026-10-15T11:00:00-07:00 → 2027-02-17T09:00:00-07:00 (+125d) | was named Foundation pour — ADMIN grade — bay A1 |
| A-1296 | CMU wall construction — ADMIN grade — bay A1 | 2026-10-23T11:00:00-07:00 → 2027-02-25T09:00:00-07:00 (+125d) | 2026-10-26T10:42:00-07:00 → 2027-02-26T08:42:00-07:00 (+123d) |  |
| A-1297 | Bond beam & cell grouting — ADMIN grade — bay A1 | 2026-10-26T10:42:00-07:00 → 2027-02-26T08:42:00-07:00 (+123d) | 2026-10-27T10:54:00-07:00 → 2027-03-01T08:54:00-07:00 (+125d) |  |
| A-1298 | Steel lintel & joist weld — ADMIN grade — bay A1 | 2026-10-27T10:54:00-07:00 → 2027-03-01T08:54:00-07:00 (+125d) | 2026-10-28T12:30:00-07:00 → 2027-03-02T10:30:00-07:00 (+125d) |  |
| A-1299 | Roof deck & waterproofing — ADMIN grade — bay A1 | 2026-10-28T12:30:00-07:00 → 2027-03-02T10:30:00-07:00 (+125d) | 2026-11-02T12:36:00-07:00 → 2027-03-05T10:36:00-07:00 (+123d) |  |
| A-1300 | Perimeter joint sealant — ADMIN grade — bay A1 | 2026-11-05T12:36:00-07:00 → 2027-03-10T10:36:00-07:00 (+125d) | 2026-11-06T12:12:00-07:00 → 2027-03-11T10:12:00-07:00 (+125d) |  |
| A-1301 | Interior fit-out — ADMIN grade — bay A1 | 2026-11-06T12:12:00-07:00 → 2027-03-11T10:12:00-07:00 (+125d) | 2026-11-13T14:42:00-07:00 → 2027-03-18T12:42:00-07:00 (+125d) |  |
| A-1302 | Footing excavation — ADMIN grade — bay B1 | 2026-10-13T14:00:00-07:00 → 2027-02-15T08:00:00-07:00 (+125d) | 2026-10-15T11:36:00-07:00 → 2027-02-16T13:36:00-07:00 (+124d) |  |
| A-1303 | Foundation pour (cold weather protection) — ADMIN grade — bay B1 | 2026-10-15T11:36:00-07:00 → 2027-02-16T13:36:00-07:00 (+124d) | 2026-10-16T11:00:00-07:00 → 2027-02-17T13:00:00-07:00 (+124d) | was named Foundation pour — ADMIN grade — bay B1 |
| A-1304 | CMU wall construction — ADMIN grade — bay B1 | 2026-10-26T11:00:00-07:00 → 2027-02-25T13:00:00-07:00 (+122d) | 2026-10-27T12:06:00-07:00 → 2027-02-26T14:06:00-07:00 (+122d) |  |
| A-1305 | Bond beam & cell grouting — ADMIN grade — bay B1 | 2026-10-27T12:06:00-07:00 → 2027-02-26T14:06:00-07:00 (+122d) | 2026-10-28T11:48:00-07:00 → 2027-03-01T13:48:00-07:00 (+124d) |  |
| A-1306 | Steel lintel & joist weld — ADMIN grade — bay B1 | 2026-10-28T11:48:00-07:00 → 2027-03-01T13:48:00-07:00 (+124d) | 2026-10-29T12:06:00-07:00 → 2027-03-02T14:06:00-07:00 (+124d) |  |
| A-1307 | Roof deck & waterproofing — ADMIN grade — bay B1 | 2026-10-29T12:06:00-07:00 → 2027-03-02T14:06:00-07:00 (+124d) | 2026-11-04T07:18:00-07:00 → 2027-03-08T09:18:00-07:00 (+124d) |  |
| A-1308 | Perimeter joint sealant — ADMIN grade — bay B1 | 2026-11-09T07:18:00-07:00 → 2027-03-11T09:18:00-07:00 (+122d) | 2026-11-09T14:06:00-07:00 → 2027-03-12T08:06:00-07:00 (+123d) |  |
| A-1309 | Interior fit-out — ADMIN grade — bay B1 | 2026-11-09T14:06:00-07:00 → 2027-03-12T08:06:00-07:00 (+123d) | 2026-11-17T11:42:00-07:00 → 2027-03-19T13:42:00-07:00 (+122d) |  |
| A-1310 | Subgrade & vapour barrier — PARK grade — bay A1 | 2026-09-05T07:00:00-07:00 → 2026-08-12T09:00:00-07:00 (-24d) | 2026-09-09T06:24:00-07:00 → 2026-08-14T08:24:00-07:00 (-26d) |  |
| A-1311 | Slab on grade pour — PARK grade — bay A1 | 2026-09-09T06:24:00-07:00 → 2026-08-14T08:24:00-07:00 (-26d) | 2026-09-09T14:36:00-07:00 → 2026-08-15T06:36:00-07:00 (-25d) |  |
| A-1312 | Precast panel erection — PARK grade — bay A1 | 2026-09-18T06:36:00-07:00 → 2026-08-24T08:36:00-07:00 (-25d) | 2026-09-22T09:06:00-07:00 → 2026-08-27T11:06:00-07:00 (-26d) |  |
| A-1313 | Connection weld — PARK grade — bay A1 | 2026-09-22T09:06:00-07:00 → 2026-08-27T11:06:00-07:00 (-26d) | 2026-09-23T06:30:00-07:00 → 2026-08-28T08:30:00-07:00 (-26d) |  |
| A-1314 | Panel joint sealant — PARK grade — bay A1 | 2026-09-23T06:30:00-07:00 → 2026-08-28T08:30:00-07:00 (-26d) | 2026-09-23T12:30:00-07:00 → 2026-08-28T14:30:00-07:00 (-26d) |  |
| A-1315 | Spray-applied fireproofing — PARK grade — bay A1 | 2026-09-23T12:30:00-07:00 → 2026-08-28T14:30:00-07:00 (-26d) | 2026-09-24T13:12:00-07:00 → 2026-08-29T15:12:00-07:00 (-26d) |  |
| A-1316 | Interior floor marking — PARK grade — bay A1 | 2026-09-28T07:12:00-07:00 → 2026-09-02T09:12:00-07:00 (-26d) | 2026-09-28T12:18:00-07:00 → 2026-09-02T14:18:00-07:00 (-26d) |  |
| A-1317 | Subgrade & vapour barrier — PARK grade — bay B1 | 2026-09-05T15:00:00-07:00 → 2026-08-12T13:00:00-07:00 (-24d) | 2026-09-10T06:00:00-07:00 → 2026-08-14T14:00:00-07:00 (-27d) |  |
| A-1318 | Slab on grade pour — PARK grade — bay B1 | 2026-09-10T06:00:00-07:00 → 2026-08-14T14:00:00-07:00 (-27d) | 2026-09-10T12:54:00-07:00 → 2026-08-15T10:54:00-07:00 (-26d) |  |
| A-1319 | Precast panel erection — PARK grade — bay B1 | 2026-09-18T14:54:00-07:00 → 2026-08-24T12:54:00-07:00 (-25d) | 2026-09-23T10:12:00-07:00 → 2026-08-28T08:12:00-07:00 (-26d) |  |
| A-1320 | Connection weld — PARK grade — bay B1 | 2026-09-23T10:12:00-07:00 → 2026-08-28T08:12:00-07:00 (-26d) | 2026-09-24T08:18:00-07:00 → 2026-08-29T06:18:00-07:00 (-26d) |  |
| A-1321 | Panel joint sealant — PARK grade — bay B1 | 2026-09-24T08:18:00-07:00 → 2026-08-29T06:18:00-07:00 (-26d) | 2026-09-25T06:24:00-07:00 → 2026-08-29T14:24:00-07:00 (-27d) |  |
| A-1322 | Spray-applied fireproofing — PARK grade — bay B1 | 2026-09-25T06:24:00-07:00 → 2026-08-29T14:24:00-07:00 (-27d) | 2026-09-26T06:48:00-07:00 → 2026-08-31T14:48:00-07:00 (-26d) |  |
| A-1323 | Interior floor marking — PARK grade — bay B1 | 2026-09-29T10:48:00-07:00 → 2026-09-03T08:48:00-07:00 (-26d) | 2026-09-29T15:12:00-07:00 → 2026-09-03T13:12:00-07:00 (-26d) |  |
| A-1324 | Subgrade preparation — ROAD grade — bay A1 | 2027-01-15T13:00:00-07:00 → 2026-12-28T07:00:00-07:00 (-18d) | 2027-01-19T12:36:00-07:00 → 2026-12-31T06:36:00-07:00 (-19d) |  |
| A-1325 | Aggregate base course — ROAD grade — bay A1 | 2027-01-19T12:36:00-07:00 → 2026-12-31T06:36:00-07:00 (-19d) | 2027-01-21T14:42:00-07:00 → 2027-01-04T08:42:00-07:00 (-17d) |  |
| A-1326 | HMA base course — ROAD grade — bay A1 | 2027-01-21T14:42:00-07:00 → 2027-01-04T08:42:00-07:00 (-17d) | 2027-01-22T12:24:00-07:00 → 2027-01-05T06:24:00-07:00 (-17d) |  |
| A-1327 | HMA surface course — ROAD grade — bay A1 | 2027-01-26T06:24:00-07:00 → 2027-01-07T10:24:00-07:00 (-19d) | 2027-01-27T06:24:00-07:00 → 2027-01-08T10:24:00-07:00 (-19d) |  |
| A-1328 | Pavement marking & striping — ROAD grade — bay A1 | 2027-02-01T14:24:00-07:00 → 2027-01-14T08:24:00-07:00 (-18d) | 2027-02-02T09:24:00-07:00 → 2027-01-14T13:24:00-07:00 (-19d) |  |
